How a schedule from MS Project changed from version to version. A marks actual dates.

## Version 1 (saved 2019-05-08)

Note of the change: Nix neues

| ID | WBS | Task | Duration | Start | Finish | Total float | Constraint |
| --- | --- | --- | --- | --- | --- | --- | --- |
| 1 | 1 | **Analyse** | 1d? | 2020-02-28 | 2020-02-28 | 0d | as late as possible |
| 2 |  | Ist-Analyse durchführen | 1d? | 2020-02-28 | 2020-02-28 | 0d |  |
| 3 |  | Anforderungen erheben | 1d? | 2020-02-28 | 2020-02-28 | 0d |  |
| 4 | 2 | **Konzeption** | 1d? | 2020-02-28 | 2020-02-28 | 0d | as late as possible |
| 5 |  | Grobkonzept vervollständigen | 1d? | 2020-02-28 | 2020-02-28 | 0d |  |
| 6 |  | Feinkonzept erstellen | 1d? | 2020-02-28 | 2020-02-28 | 0d |  |
| 7 |  | Berechtigungskonzept erstellen | 1d? | 2020-02-28 | 2020-02-28 | 0d | as late as possible |
| 8 |  | Product-Backlog anlegen | 1d? | 2020-02-28 | 2020-02-28 | 0d | as late as possible |
| 9 |  | Kernsystem implementieren | 1d? | 2020-02-28 | 2020-02-28 | 0d |  |
| 10 |  | Prozesse implementieren | 1d? | 2020-02-28 | 2020-02-28 | 0d |  |
| 11 |  | Schmankerl implementieren | 1d? | 2020-02-28 | 2020-02-28 | 0d |  |
| 12 |  | Zusatzfunktionen implementieren | 1d? | 2020-02-28 | 2020-02-28 | 0d |  |
| 13 |  | Betriebshandbuch erstellen | 1d? | 2020-02-28 | 2020-02-28 | 0d |  |
| 14 |  | Test vorbereiten | 1d? | 2020-02-28 | 2020-02-28 | 0d |  |
| 15 |  | Test durchführen | 1d? | 2020-02-28 | 2020-02-28 | 0d |  |
| 16 |  | Software installieren | 1d? | 2020-02-28 | 2020-02-28 | 0d |  |
| 17 |  | Fehler beheben | 1d? | 2020-02-28 | 2020-02-28 | 0d |  |
| 18 |  | Schulungskonzept erarbeiten | 1d? | 2020-02-28 | 2020-02-28 | 0d |  |
| 19 |  | Schulung durchführen | 1d? | 2020-02-28 | 2020-02-28 | 0d |  |
| 20 |  | Nutzerakzeptanzumfrage durchführen | 1d? | 2020-02-28 | 2020-02-28 | 0d |  |
| 21 |  | Nutzerakzeptanzumfrage auswerten | 1d? | 2020-02-28 | 2020-02-28 | 0d |  |
| 22 |  | Performanceziele überprüfen | 1d? | 2020-02-28 | 2020-02-28 | 0d |  |

## Version 2 (saved 2019-05-13)

Note of the change: Arbeitpakete gereviewed, Listen aktualisiert

Last finish 2020-02-28 → 2019-10-21 (-130d).

Added:

| ID | Task | Duration | Start | Finish | Predecessors | Constraint | Resources |
| --- | --- | --- | --- | --- | --- | --- | --- |
| 1 | Projektstart | 0d | 2019-06-03 | 2019-06-03 |  | start no earlier than 2019-06-03 |  |
| 10 | **Realisierungsphase** | 76d? | 2019-07-04 | 2019-10-21 | 5 |  |  |
| 11 | **Sprints** | 76d? | 2019-07-04 | 2019-10-21 |  |  |  |
| 12 | **Sprint 1** | 8d? | 2019-07-04 | 2019-07-16 |  |  |  |
| 13 | Sprint Planning 1 | 0.5d | 2019-07-04 | 2019-07-04 |  | start no earlier than 2019-06-03 | Lukas Schmidt; Dennis Design; Leon König; Leon Kuß; Luca Siekmann; Robin Behrendt |
| 15 | Test vorbereiten 1 | 1d | 2019-07-04 | 2019-07-05 |  | start no earlier than 2019-06-03 |  |
| 16 | Refinement 1 | 0.5d | 2019-07-04 | 2019-07-04 |  | start no earlier than 2019-06-10 |  |
| 17 | Betriebshandbuch erstellen 1 | 1d? | 2019-07-04 | 2019-07-05 |  |  |  |
| 18 | Sprint Review & Retrospektive 1 | 0.5d | 2019-07-04 | 2019-07-04 |  | start no earlier than 2019-06-17 |  |
| 19 | **Sprint 2** | 1d? | 2019-07-04 | 2019-07-05 |  |  |  |
| 20 | Sprint Planning 2 | 0.5d | 2019-07-04 | 2019-07-04 |  | start no earlier than 2019-06-17 |  |
| 21 | Prozesse implementieren 1 | 1d? | 2019-07-04 | 2019-07-05 |  |  |  |
| 22 | Test vorbereiten 2 | 1d | 2019-07-04 | 2019-07-05 |  | start no earlier than 2019-06-17 |  |
| 23 | Test durchführen 1 | 1d | 2019-07-04 | 2019-07-05 |  | start no earlier than 2019-06-03 |  |
| 24 | Software installieren 1 | 1d | 2019-07-04 | 2019-07-05 |  | start no earlier than 2019-06-03 |  |
| 25 | Nutzerakzeptanzumfrage durchführen 1 | 1d | 2019-07-04 | 2019-07-05 |  | start no earlier than 2019-06-03 |  |
| 26 | Nutzerakzeptanzumfrage auswerten 1 | 1d | 2019-07-04 | 2019-07-05 |  | start no earlier than 2019-06-03 |  |
| 27 | Performanceziele überprüfen 1 | 1d | 2019-07-04 | 2019-07-05 |  | start no earlier than 2019-06-03 |  |
| 28 | Fehler beheben 1 | 1d | 2019-07-04 | 2019-07-05 |  | start no earlier than 2019-06-03 |  |
| 29 | Refinement 2 | 0.5d | 2019-07-04 | 2019-07-04 |  | start no earlier than 2019-06-24 |  |
| 30 | Betriebshandbuch erstellen 2 | 1d? | 2019-07-04 | 2019-07-05 |  |  |  |
| 31 | Sprint Review & Retrospektive 2 | 0.5d | 2019-07-04 | 2019-07-04 |  | start no earlier than 2019-07-01 |  |
| 32 | **Sprint 3** | 7d? | 2019-07-04 | 2019-07-15 |  |  |  |
| 33 | Sprint Planning 3 | 0.5d | 2019-07-04 | 2019-07-04 |  | start no earlier than 2019-07-01 |  |
| 34 | Prozesse implementieren 2 | 1d? | 2019-07-04 | 2019-07-05 |  |  |  |
| 35 | Test vorbereiten 3 | 1d | 2019-07-04 | 2019-07-05 |  | start no earlier than 2019-07-01 |  |
| 36 | Test durchführen 2 | 1d | 2019-07-04 | 2019-07-05 |  | start no earlier than 2019-06-17 |  |
| 37 | Software installieren 2 | 1d | 2019-07-04 | 2019-07-05 |  | start no earlier than 2019-06-17 |  |
| 38 | Nutzerakzeptanzumfrage durchführen 2 | 1d | 2019-07-04 | 2019-07-05 |  | start no earlier than 2019-06-17 |  |
| 39 | Nutzerakzeptanzumfrage auswerten 2 | 1d | 2019-07-04 | 2019-07-05 |  | start no earlier than 2019-06-17 |  |
| 40 | Performanceziele überprüfen 2 | 1d | 2019-07-04 | 2019-07-05 |  | start no earlier than 2019-06-17 |  |
| 41 | Fehler beheben 2 | 1d | 2019-07-04 | 2019-07-05 |  | start no earlier than 2019-06-17 |  |
| 42 | Refinement 3 | 0.5d | 2019-07-08 | 2019-07-08 |  | start no earlier than 2019-07-08 |  |
| 43 | Betriebshandbuch erstellen 3 | 1d? | 2019-07-04 | 2019-07-05 |  |  |  |
| 44 | Sprint Review & Retrospektive 3 | 0.5d | 2019-07-15 | 2019-07-15 |  | start no earlier than 2019-07-15 |  |
| 45 | **Sprint 4** | 17d? | 2019-07-04 | 2019-07-29 |  |  |  |
| 46 | Sprint Planning 4 | 0.5d | 2019-07-15 | 2019-07-15 |  | start no earlier than 2019-07-15 |  |
| 47 | Prozesse implementieren 3 | 1d? | 2019-07-04 | 2019-07-05 |  |  |  |
| 48 | Test vorbereiten 4 | 1d | 2019-07-15 | 2019-07-15 |  | start no earlier than 2019-07-15 |  |
| 49 | Test durchführen 3 | 1d | 2019-07-04 | 2019-07-05 |  | start no earlier than 2019-07-01 |  |
| 50 | Software installieren 3 | 1d | 2019-07-04 | 2019-07-05 |  | start no earlier than 2019-07-01 |  |
| 51 | Nutzerakzeptanzumfrage durchführen 3 | 1d | 2019-07-04 | 2019-07-05 |  | start no earlier than 2019-07-01 |  |
| 52 | Nutzerakzeptanzumfrage auswerten 3 | 1d | 2019-07-04 | 2019-07-05 |  | start no earlier than 2019-07-01 |  |
| 53 | Performanceziele überprüfen 3 | 1d | 2019-07-04 | 2019-07-05 |  | start no earlier than 2019-07-01 |  |
| 54 | Fehler beheben 3 | 1d | 2019-07-04 | 2019-07-05 |  | start no earlier than 2019-07-01 |  |
| 55 | Refinement 4 | 0.5d | 2019-07-22 | 2019-07-22 |  | start no earlier than 2019-07-22 |  |
| 56 | Betriebshandbuch erstellen 4 | 1d? | 2019-07-04 | 2019-07-05 |  |  |  |
| 57 | Sprint Review & Retrospektive 4 | 0.5d | 2019-07-29 | 2019-07-29 |  | start no earlier than 2019-07-29 |  |
| 58 | **Sprint 5** | 27d? | 2019-07-04 | 2019-08-12 |  |  |  |
| 59 | Sprint Planning 5 | 0.5d | 2019-07-29 | 2019-07-29 |  | start no earlier than 2019-07-29 |  |
| 60 | Prozesse implementieren 4 | 1d? | 2019-07-04 | 2019-07-05 |  |  |  |
| 61 | Test vorbereiten 5 | 1d | 2019-07-29 | 2019-07-29 |  | start no earlier than 2019-07-29 |  |
| 62 | Test durchführen 4 | 1d | 2019-07-15 | 2019-07-15 |  | start no earlier than 2019-07-15 |  |
| 63 | Software installieren 4 | 1d | 2019-07-15 | 2019-07-15 |  | start no earlier than 2019-07-15 |  |
| 64 | Nutzerakzeptanzumfrage durchführen 4 | 1d | 2019-07-15 | 2019-07-15 |  | start no earlier than 2019-07-15 |  |
| 65 | Nutzerakzeptanzumfrage auswerten 4 | 1d | 2019-07-15 | 2019-07-15 |  | start no earlier than 2019-07-15 |  |
| 66 | Performanceziele überprüfen 4 | 1d | 2019-07-15 | 2019-07-15 |  | start no earlier than 2019-07-15 |  |
| 67 | Fehler beheben 4 | 1d | 2019-07-15 | 2019-07-15 |  | start no earlier than 2019-07-15 |  |
| 68 | Refinement 5 | 0.5d | 2019-08-05 | 2019-08-05 |  | start no earlier than 2019-08-05 |  |
| 69 | Betriebshandbuch erstellen 5 | 1d? | 2019-07-04 | 2019-07-05 |  |  |  |
| 70 | Sprint Review & Retrospektive 5 | 0.5d | 2019-08-12 | 2019-08-12 |  | start no earlier than 2019-08-12 |  |
| 71 | **Sprint 6** | 37d? | 2019-07-04 | 2019-08-26 |  |  |  |
| 72 | Sprint Planning 6 | 0.5d | 2019-08-12 | 2019-08-12 |  | start no earlier than 2019-08-12 |  |
| 73 | "Schmankerl" implementieren 1 | 1d? | 2019-07-04 | 2019-07-05 |  |  |  |
| 74 | Test vorbereiten 6 | 1d | 2019-08-12 | 2019-08-12 |  | start no earlier than 2019-08-12 |  |
| 75 | Test durchführen 5 | 1d | 2019-07-29 | 2019-07-29 |  | start no earlier than 2019-07-29 |  |
| 76 | Software installieren 5 | 1d | 2019-07-29 | 2019-07-29 |  | start no earlier than 2019-07-29 |  |
| 77 | Nutzerakzeptanzumfrage durchführen 5 | 1d | 2019-07-29 | 2019-07-29 |  | start no earlier than 2019-07-29 |  |
| 78 | Nutzerakzeptanzumfrage auswerten 5 | 1d | 2019-07-29 | 2019-07-29 |  | start no earlier than 2019-07-29 |  |
| 79 | Performanceziele überprüfen 5 | 1d | 2019-07-29 | 2019-07-29 |  | start no earlier than 2019-07-29 |  |
| 80 | Fehler beheben 5 | 1d | 2019-07-29 | 2019-07-29 |  | start no earlier than 2019-07-29 |  |
| 81 | Refinement 6 | 0.5d | 2019-08-19 | 2019-08-19 |  | start no earlier than 2019-08-19 |  |
| 82 | Betriebshandbuch erstellen 6 | 1d? | 2019-07-04 | 2019-07-05 |  |  |  |
| 83 | Sprint Review & Retrospektive 6 | 0.5d | 2019-08-26 | 2019-08-26 |  | start no earlier than 2019-08-26 |  |
| 84 | **Sprint 7** | 47d? | 2019-07-04 | 2019-09-09 |  |  |  |
| 85 | Sprint Planning 7 | 0.5d | 2019-08-26 | 2019-08-26 |  | start no earlier than 2019-08-26 |  |
| 86 | "Schmankerl" implmentieren 2 | 1d? | 2019-07-04 | 2019-07-05 |  |  |  |
| 87 | Test vorbereiten 7 | 1d | 2019-08-26 | 2019-08-26 |  | start no earlier than 2019-08-26 |  |
| 88 | Test durchführen 6 | 1d | 2019-08-12 | 2019-08-12 |  | start no earlier than 2019-08-12 |  |
| 89 | Software installieren 6 | 1d | 2019-08-12 | 2019-08-12 |  | start no earlier than 2019-08-12 |  |
| 90 | Nutzerakzeptanzumfrage durchführen 6 | 1d | 2019-08-12 | 2019-08-12 |  | start no earlier than 2019-08-12 |  |
| 91 | Nutzerakzeptanzumfrage auswerten 6 | 1d | 2019-08-12 | 2019-08-12 |  | start no earlier than 2019-08-12 |  |
| 92 | Performanceziele überprüfen 6 | 1d | 2019-08-12 | 2019-08-12 |  | start no earlier than 2019-08-12 |  |
| 93 | Fehler beheben 6 | 1d | 2019-08-12 | 2019-08-12 |  | start no earlier than 2019-08-12 |  |
| 94 | Refinement 7 | 0.5d | 2019-09-02 | 2019-09-02 |  | start no earlier than 2019-09-02 |  |
| 95 | Betriebshandbuch erstellen 7 | 1d? | 2019-07-04 | 2019-07-05 |  |  |  |
| 96 | Sprint Review & Retrospektive 7 | 0.5d | 2019-09-09 | 2019-09-09 |  | start no earlier than 2019-09-09 |  |
| 97 | **Sprint 8** | 57d? | 2019-07-04 | 2019-09-23 |  |  |  |
| 98 | Sprint Planning 8 | 0.5d | 2019-09-09 | 2019-09-09 |  | start no earlier than 2019-09-09 |  |
| 99 | "Schmankerl" implementieren 3 | 1d? | 2019-07-04 | 2019-07-05 |  |  |  |
| 100 | Zusatzfunktionen implementieren 1 | 1d? | 2019-07-04 | 2019-07-05 |  |  |  |
| 101 | Test vorbereiten 8 | 1d | 2019-09-09 | 2019-09-09 |  | start no earlier than 2019-09-09 |  |
| 102 | Test durchführen 7 | 1d | 2019-08-26 | 2019-08-26 |  | start no earlier than 2019-08-26 |  |
| 103 | Software installieren 7 | 1d | 2019-08-26 | 2019-08-26 |  | start no earlier than 2019-08-26 |  |
| 104 | Nutzerakzeptanzumfrage durchführen 7 | 1d | 2019-08-26 | 2019-08-26 |  | start no earlier than 2019-08-26 |  |
| 105 | Nutzerakzeptanzumfrage auswerten 7 | 1d | 2019-08-26 | 2019-08-26 |  | start no earlier than 2019-08-26 |  |
| 106 | Performanceziele überprüfen 7 | 1d | 2019-08-26 | 2019-08-26 |  | start no earlier than 2019-08-26 |  |
| 107 | Fehler beheben 7 | 1d | 2019-08-26 | 2019-08-26 |  | start no earlier than 2019-08-26 |  |
| 108 | Refinement 8 | 0.5d | 2019-09-16 | 2019-09-16 |  | start no earlier than 2019-09-16 |  |
| 109 | Betriebshandbuch erstellen 8 | 1d? | 2019-07-04 | 2019-07-05 |  |  |  |
| 110 | Sprint Review & Retrospektive 8 | 0.5d | 2019-09-23 | 2019-09-23 |  | start no earlier than 2019-09-23 |  |
| 111 | **Sprint 9** | 66d? | 2019-07-04 | 2019-10-07 |  |  |  |
| 112 | Sprint Planning 9 | 0.5d | 2019-09-23 | 2019-09-23 |  | start no earlier than 2019-09-23 |  |
| 113 | Zusatzfunktionen implementieren 2 | 1d? | 2019-07-04 | 2019-07-05 |  |  |  |
| 114 | Test vorbereiten 9 | 1d | 2019-09-23 | 2019-09-23 |  | start no earlier than 2019-09-23 |  |
| 115 | Test durchführen 8 | 1d | 2019-09-09 | 2019-09-09 |  | start no earlier than 2019-09-09 |  |
| 116 | Software installieren 8 | 1d | 2019-09-09 | 2019-09-09 |  | start no earlier than 2019-09-09 |  |
| 117 | Nutzerakzeptanzumfrage durchführen 8 | 1d | 2019-09-09 | 2019-09-09 |  | start no earlier than 2019-09-09 |  |
| 118 | Nutzerakzeptanzumfrage auswerten 8 | 1d | 2019-09-09 | 2019-09-09 |  | start no earlier than 2019-09-09 |  |
| 119 | Performanceziele überprüfen 8 | 1d | 2019-09-09 | 2019-09-09 |  | start no earlier than 2019-09-09 |  |
| 120 | Fehler beheben 8 | 1d | 2019-09-09 | 2019-09-09 |  | start no earlier than 2019-09-09 |  |
| 121 | Refinement 9 | 0.5d | 2019-09-30 | 2019-09-30 |  | start no earlier than 2019-09-30 |  |
| 122 | Betriebshandbuch erstellen 9 | 1d? | 2019-07-04 | 2019-07-05 |  |  |  |
| 123 | Sprint Review & Retrospektive 9 | 0.5d | 2019-10-07 | 2019-10-07 |  | start no earlier than 2019-10-07 |  |
| 124 | **Sprint 10** | 76d? | 2019-07-04 | 2019-10-21 |  |  |  |
| 125 | Sprint Planning 10 | 0.5d | 2019-07-04 | 2019-07-04 |  |  |  |
| 126 | Zusatzfunktionen implementieren 3 | 1d? | 2019-07-04 | 2019-07-05 |  |  |  |
| 127 | Test vorbereiten 10 | 1d | 2019-10-07 | 2019-10-07 |  | start no earlier than 2019-10-07 |  |
| 128 | Test durchführen 9 | 1d | 2019-09-23 | 2019-09-23 |  | start no earlier than 2019-09-23 |  |
| 129 | Software installieren 9 | 1d | 2019-09-23 | 2019-09-23 |  | start no earlier than 2019-09-23 |  |
| 130 | Nutzerakzeptanzumfrage durchführen 9 | 1d | 2019-09-23 | 2019-09-23 |  | start no earlier than 2019-09-23 |  |
| 131 | Nutzerakzeptanzumfrage auswerten 9 | 1d | 2019-09-23 | 2019-09-23 |  | start no earlier than 2019-09-23 |  |
| 132 | Performanceziele überprüfen 9 | 1d | 2019-09-23 | 2019-09-23 |  | start no earlier than 2019-09-23 |  |
| 133 | Fehler beheben 9 | 1d | 2019-09-23 | 2019-09-23 |  | start no earlier than 2019-09-23 |  |
| 134 | Refinement 10 | 0.5d | 2019-10-14 | 2019-10-14 |  | start no earlier than 2019-10-14 |  |
| 135 | Schulungskonzept erarbeiten 1 | 1d? | 2019-07-04 | 2019-07-05 |  |  |  |
| 136 | Betriebshandbuch erstellen 10 | 1d? | 2019-07-04 | 2019-07-05 |  |  |  |
| 137 | Sprint Review & Retrospektive 10 | 0.5d | 2019-10-21 | 2019-10-21 |  | start no earlier than 2019-10-21 |  |
| 138 | **Sprint 11** | 66.5d? | 2019-07-04 | 2019-10-07 |  |  |  |
| 139 | Test durchführen 10 | 1d | 2019-10-07 | 2019-10-07 |  | start no earlier than 2019-10-07 |  |
| 140 | Software installieren 10 | 1d | 2019-10-07 | 2019-10-07 |  | start no earlier than 2019-10-07 |  |
| 141 | Nutzerakzeptanzumfrage durchführen 10 | 1d | 2019-10-07 | 2019-10-07 |  | start no earlier than 2019-10-07 |  |
| 142 | Nutzerakzeptanzumfrage auswerten 10 | 1d | 2019-10-07 | 2019-10-07 |  | start no earlier than 2019-10-07 |  |
| 143 | Performanceziele überprüfen 10 | 1d | 2019-10-07 | 2019-10-07 |  | start no earlier than 2019-10-07 |  |
| 144 | Fehler beheben 10 | 1d | 2019-10-07 | 2019-10-07 |  | start no earlier than 2019-10-07 |  |
| 145 | Schulungskonzept erarbeiten 2 | 1d? | 2019-07-04 | 2019-07-05 |  |  |  |

Removed: 10 Prozesse implementieren; 11 Schmankerl implementieren; 12 Zusatzfunktionen implementieren; 13 Betriebshandbuch erstellen; 14 Test vorbereiten; 15 Test durchführen; 16 Software installieren; 17 Fehler beheben; 18 Schulungskonzept erarbeiten; 19 Schulung durchführen; 20 Nutzerakzeptanzumfrage durchführen; 21 Nutzerakzeptanzumfrage auswerten; 22 Performanceziele überprüfen

Changed:

| ID | Task | Start | Finish | Duration | Total float | Predecessors | Other |
| --- | --- | --- | --- | --- | --- | --- | --- |
| 2 | **Analysephase** | 2020-02-28 → 2019-06-03 (-270d) | 2020-02-28 → 2019-06-21 (-252d) | 1d? → 15d | 0d → 68d | none → 1SS | was named Analyse; constraint as late as possible → none |
| 3 | Ist-Analyse durchführen | 2020-02-28 → 2019-06-03 (-270d) | 2020-02-28 → 2019-06-14 (-259d) | 1d? → 10d | 0d → 68d | none → 1SS | resources none → Andreas Auswertung; Anna Lyse; Gerrit Peitz; Leon Kuß; Luca Siekmann; Robin Behrendt |
| 4 | Anforderungen erheben | 2020-02-28 → 2019-06-17 (-256d) | 2020-02-28 → 2019-06-21 (-252d) | 1d? → 5d | 0d → 68d | none → 3 | resources none → Andreas Auswertung; Anna Lyse |
| 5 | **Konzeptionsphase** | 2020-02-28 → 2019-06-24 (-249d) | 2020-02-28 → 2019-07-04 (-239d) | 1d? → 8.5d | 0d → 68d | none → 2 | was named Konzeption; constraint as late as possible → none |
| 6 | Grobkonzept vervollständigen | 2020-02-28 → 2019-06-24 (-249d) | 2020-02-28 → 2019-06-25 (-248d) | 1d? → 1.5d | 0d → 68d | none → 3, 4 | resources none → Andreas Auswertung; Arthur Architektur |
| 7 | Feinkonzept erstellen | 2020-02-28 → 2019-06-25 (-248d) | 2020-02-28 → 2019-07-02 (-241d) | 1d? → 5d | 0d → 68d | none → 6 | resources none → Arthur Architektur; Dennis Design |
| 8 | Berechtigungskonzept erstellen | 2020-02-28 → 2019-06-25 (-248d) | 2020-02-28 → 2019-06-27 (-246d) | 1d? → 2.5d | 0d → 70.5d | none → 6 | constraint as late as possible → none; resources none → Andreas Auswertung; Anna Lyse |
| 9 | Product-Backlog anlegen | 2020-02-28 → 2019-07-02 (-241d) | 2020-02-28 → 2019-07-04 (-239d) | 1d? → 2d | 0d → 68d | none → 7, 8 | constraint as late as possible → none; resources none → Lukas Schmidt |
| 14 | Kernsystem implementieren | 2020-02-28 → 2019-07-04 (-239d) | 2020-02-28 → 2019-07-16 (-227d) | 1d? → 8d | 0d → 68d |  |  |

## Version 3 (saved 2019-05-15)

Note of the change: MS Project

Last finish 2019-10-21 → 2019-11-28 (+38d).

Added:

| ID | Task | Duration | Start | Finish | Predecessors | Resources |
| --- | --- | --- | --- | --- | --- | --- |
| 2 | Projektmanagement | 124d | 2019-06-03 08:00 | 2019-11-27 17:00 | 1 | Lukas Schmidt [12.5%] |

Removed: 145 Schulungskonzept erarbeiten 2

Changed:

| ID | Task | Start | Finish | Duration | Total float | Predecessors | Other |
| --- | --- | --- | --- | --- | --- | --- | --- |
| 1 | Projektstart | 2019-06-03 → 2019-06-03 08:00 | 2019-06-03 → 2019-06-03 08:00 |  | 57.5d → 0d |  | constraint start no earlier than 2019-06-03 → start no earlier than 2019-06-03 08:00 |
| 3 | **Analysephase** | 2019-06-03 → 2019-06-03 08:00 | 2019-06-21 → 2019-06-14 17:00 (-7d) | 15d → 10d | 68d → 0d | 1SS → 1 |  |
| 4 | Ist-Analyse durchführen | 2019-06-03 → 2019-06-03 08:00 | 2019-06-14 → 2019-06-07 17:00 (-7d) | 10d → 5d | 68d → 0d |  | resources Andreas Auswertung; Anna Lyse; Gerrit Peitz; Leon Kuß; Luca Siekmann; Robin Behrendt → Anna Lyse; Gerrit Peitz; Luca Siekmann; Robin Behrendt; Leon König |
| 5 | Anforderungen erheben | 2019-06-17 → 2019-06-10 08:00 (-7d) | 2019-06-21 → 2019-06-14 17:00 (-7d) |  | 68d → 0d |  | resources Andreas Auswertung; Anna Lyse → Anna Lyse |
| 6 | **Konzeptionsphase** | 2019-06-24 → 2019-06-17 08:00 (-7d) | 2019-07-04 → 2019-06-27 17:00 (-7d) | 8.5d → 9d | 68d → 0d |  |  |
| 7 | Grobkonzept vervollständigen | 2019-06-24 → 2019-06-17 08:00 (-7d) | 2019-06-25 → 2019-06-18 17:00 (-7d) | 1.5d → 2d | 68d → 0d |  | resources Andreas Auswertung; Arthur Architektur → Arthur Architektur |
| 8 | Feinkonzept erstellen | 2019-06-25 → 2019-06-19 08:00 (-6d) | 2019-07-02 → 2019-06-25 17:00 (-7d) |  | 68d → 0d |  | resources Arthur Architektur; Dennis Design → Dennis Design |
| 9 | Berechtigungskonzept erstellen | 2019-06-25 → 2019-06-19 08:00 (-6d) | 2019-06-27 → 2019-06-20 17:00 (-7d) | 2.5d → 2d | 70.5d → 3d |  | resources Andreas Auswertung; Anna Lyse → Anna Lyse |
| 10 | Product-Backlog anlegen | 2019-07-02 → 2019-06-26 08:00 (-6d) | 2019-07-04 → 2019-06-27 17:00 (-7d) |  | 68d → 0d |  |  |
| 11 | **Realisierungsphase** | 2019-07-04 → 2019-07-01 08:00 (-3d) | 2019-10-21 → 2019-11-28 12:00 (+38d) | 76d? → 106.5d |  | 6 → 6FS+1d |  |
| 12 | **Sprints** | 2019-07-04 → 2019-07-01 08:00 (-3d) | 2019-10-21 → 2019-11-15 17:00 (+25d) | 76d? → 98d |  | none → 6FS+1d |  |
| 13 | **Sprint 1** | 2019-07-04 → 2019-07-01 08:00 (-3d) | 2019-07-16 → 2019-07-12 17:00 (-4d) | 8d? → 10d | 68d → 0d | none → 6FS+1d |  |
| 14 | Sprint Planning 1 | 2019-07-04 → 2019-07-01 08:00 (-3d) | 2019-07-04 → 2019-07-01 12:00 (-3d) |  | 75.5d → 0d | none → 6FS+1d | constraint start no earlier than 2019-06-03 → none; resources Lukas Schmidt; Dennis Design; Leon König; Leon Kuß; Luca Siekmann; Robin Behrendt → Lukas Schmidt; Leon König; Leon Kuß; Luca Siekmann; Robin Behrendt; Gerrit Peitz |
| 15 | Kernsystem implementieren | 2019-07-04 → 2019-07-01 13:00 (-3d) | 2019-07-16 → 2019-07-11 17:00 (-5d) | 8d → 8.5d | 68d → 0.5d | none → 14 | resources none → Robin Behrendt; Gerrit Peitz; Leon König; Luca Siekmann |
| 16 | Test vorbereiten 1 | 2019-07-04 → 2019-07-01 13:00 (-3d) | 2019-07-05 → 2019-07-02 17:00 (-3d) | 1d → 1.5d | 75d → 8d | none → 14 | constraint start no earlier than 2019-06-03 → none; resources none → Theo Test; Petra Prüfung; Leon Kuß |
| 17 | Refinement 1 | 2019-07-04 → 2019-07-08 08:00 (+4d) | 2019-07-04 → 2019-07-08 12:00 (+4d) |  | 75.5d → 4.5d | none → 14SS+5d | constraint start no earlier than 2019-06-10 → none; resources none → Leon König; Luca Siekmann; Lukas Schmidt; Robin Behrendt; Gerrit Peitz |
| 18 | Betriebshandbuch erstellen 1 | 2019-07-04 → 2019-07-12 08:00 (+8d) | 2019-07-05 → 2019-07-12 12:00 (+7d) | 1d? → 0.5d | 75d → 0.5d | none → 15 | resources none → Robin Behrendt; Gerrit Peitz; Leon König; Luca Siekmann |
| 19 | Sprint Review & Retrospektive 1 | 2019-07-04 → 2019-07-12 13:00 (+8d) | 2019-07-04 → 2019-07-12 17:00 (+8d) |  | 75.5d → 0d | none → 14SS+9.5d | constraint start no earlier than 2019-06-17 → none; resources none → Lukas Schmidt; Dennis Design; Leon König; Luca Siekmann; Robin Behrendt |
| 20 | **Sprint 2** | 2019-07-04 → 2019-07-15 08:00 (+11d) | 2019-07-05 → 2019-07-26 17:00 (+21d) | 1d? → 10d | 75d → 0d | none → 13 |  |
| 21 | Sprint Planning 2 | 2019-07-04 → 2019-07-15 08:00 (+11d) | 2019-07-04 → 2019-07-15 12:00 (+11d) |  | 75.5d → 0d | none → 13 | constraint start no earlier than 2019-06-17 → none; resources none → Lukas Schmidt; Leon König; Leon Kuß; Luca Siekmann; Robin Behrendt; Gerrit Peitz |
| 22 | Prozesse implementieren 1 | 2019-07-04 → 2019-07-15 13:00 (+11d) | 2019-07-05 → 2019-07-25 12:00 (+20d) | 1d? → 8d | 75d → 1d | none → 21 | resources none → Robin Behrendt; Gerrit Peitz; Leon König; Luca Siekmann |
| 23 | Test durchführen 1 | 2019-07-04 → 2019-07-15 08:00 (+11d) | 2019-07-05 → 2019-07-16 11:23 (+11d) | 1d → 1.42d | 75d → 1.5d | none → 16 | constraint start no earlier than 2019-06-03 → none; resources none → Theo Test; Petra Prüfung; Leon Kuß |
| 24 | Test vorbereiten 2 | 2019-07-04 → 2019-07-16 11:23 (+12d) | 2019-07-05 → 2019-07-17 17:00 (+12d) | 1d → 1.58d | 75d → 7d | none → 23 | constraint start no earlier than 2019-06-17 → none; resources none → Petra Prüfung; Theo Test [80%]; Leon Kuß |
| 25 | Fehler beheben 1 | 2019-07-04 → 2019-07-16 16:23 (+12d) | 2019-07-05 → 2019-07-17 17:00 (+12d) |  | 75d → 1.5d | none → 23FS+0.5d | constraint start no earlier than 2019-06-03 → none; resources none → Gerrit Peitz |
| 26 | Software installieren 1 | 2019-07-04 → 2019-07-18 08:00 (+14d) | 2019-07-05 → 2019-07-18 12:00 (+13d) | 1d → 0.5d | 75d → 1.5d | none → 25 | constraint start no earlier than 2019-06-03 → none; resources none → Ina Integration |
| 27 | Nutzerakzeptanzumfrage durchführen 1 | 2019-07-04 → 2019-07-22 13:00 (+18d) | 2019-07-05 → 2019-07-22 17:00 (+17d) | 1d → 0.5d | 75d → 1.5d | none → 26FS+2d | constraint start no earlier than 2019-06-03 → none; resources none → Andreas Auswertung |
| 28 | Nutzerakzeptanzumfrage auswerten 1 | 2019-07-04 → 2019-07-25 08:00 (+21d) | 2019-07-05 → 2019-07-25 12:00 (+20d) | 1d → 0.5d | 75d → 1.5d | none → 27FS+2d | constraint start no earlier than 2019-06-03 → none; resources none → Andreas Auswertung |
| 29 | Performanceziele überprüfen 1 | 2019-07-04 → 2019-07-18 13:00 (+14d) | 2019-07-05 → 2019-07-18 17:00 (+13d) | 1d → 0.5d | 75d → 6d | none → 26 | constraint start no earlier than 2019-06-03 → none; resources none → Ina Integration |
| 30 | Refinement 2 | 2019-07-04 → 2019-07-22 08:00 (+18d) | 2019-07-04 → 2019-07-22 12:00 (+18d) |  | 75.5d → 4.5d | none → 21SS+5d | constraint start no earlier than 2019-06-24 → none; resources none → Leon König; Luca Siekmann; Lukas Schmidt; Robin Behrendt; Gerrit Peitz |
| 31 | Betriebshandbuch erstellen 2 | 2019-07-04 → 2019-07-26 13:00 (+22d) | 2019-07-05 → 2019-07-26 17:00 (+21d) | 1d? → 0.5d | 75d → 0d | none → 22 | constraint none → as late as possible; resources none → Robin Behrendt; Gerrit Peitz; Leon König; Luca Siekmann |
| 32 | Sprint Review & Retrospektive 2 | 2019-07-04 → 2019-07-26 13:00 (+22d) | 2019-07-04 → 2019-07-26 17:00 (+22d) |  | 75.5d → 0d | none → 21SS+9.5d | constraint start no earlier than 2019-07-01 → none; resources none → Lukas Schmidt; Dennis Design; Leon König; Luca Siekmann; Robin Behrendt |
| 33 | **Sprint 3** | 2019-07-04 → 2019-07-29 08:00 (+25d) | 2019-07-15 → 2019-08-09 17:00 (+25d) | 7d? → 10d | 69d → 0d | none → 20 |  |
| 34 | Sprint Planning 3 | 2019-07-04 → 2019-07-29 08:00 (+25d) | 2019-07-04 → 2019-07-29 12:00 (+25d) |  | 75.5d → 0d | none → 20 | constraint start no earlier than 2019-07-01 → none; resources none → Gerrit Peitz; Leon König; Leon Kuß; Luca Siekmann; Lukas Schmidt; Robin Behrendt |
| 35 | Prozesse implementieren 2 | 2019-07-04 → 2019-07-29 13:00 (+25d) | 2019-07-05 → 2019-08-08 12:00 (+34d) | 1d? → 8d | 75d → 1d | none → 34 | resources none → Gerrit Peitz; Leon König; Luca Siekmann; Robin Behrendt |
| 36 | Test durchführen 2 | 2019-07-04 → 2019-07-29 08:00 (+25d) | 2019-07-05 → 2019-07-30 12:00 (+25d) | 1d → 1.5d | 75d → 1.5d | none → 24 | constraint start no earlier than 2019-06-17 → none; resources none → Theo Test; Petra Prüfung; Leon Kuß |
| 37 | Test vorbereiten 3 | 2019-07-04 → 2019-07-30 13:00 (+26d) | 2019-07-05 → 2019-07-31 17:00 (+26d) | 1d → 1.5d | 75d → 7d | none → 36 | constraint start no earlier than 2019-07-01 → none; resources none → Petra Prüfung; Theo Test [80%]; Leon Kuß |
| 38 | Fehler beheben 2 | 2019-07-04 → 2019-07-31 08:00 (+27d) | 2019-07-05 → 2019-07-31 17:00 (+26d) |  | 75d → 1.5d | none → 36FS+0.5d | constraint start no earlier than 2019-06-17 → none; resources none → Leon König |
| 39 | Software installieren 2 | 2019-07-04 → 2019-08-01 08:00 (+28d) | 2019-07-05 → 2019-08-01 12:00 (+27d) | 1d → 0.5d | 75d → 1.5d | none → 38 | constraint start no earlier than 2019-06-17 → none; resources none → Ina Integration |
| 40 | Nutzerakzeptanzumfrage durchführen 2 | 2019-07-04 → 2019-08-05 13:00 (+32d) | 2019-07-05 → 2019-08-05 17:00 (+31d) | 1d → 0.5d | 75d → 1.5d | none → 39FS+2d | constraint start no earlier than 2019-06-17 → none; resources none → Andreas Auswertung |
| 41 | Nutzerakzeptanzumfrage auswerten 2 | 2019-07-04 → 2019-08-08 08:00 (+35d) | 2019-07-05 → 2019-08-08 12:00 (+34d) | 1d → 0.5d | 75d → 1.5d | none → 40FS+2d | constraint start no earlier than 2019-06-17 → none; resources none → Andreas Auswertung |
| 42 | Performanceziele überprüfen 2 | 2019-07-04 → 2019-08-01 13:00 (+28d) | 2019-07-05 → 2019-08-01 17:00 (+27d) | 1d → 0.5d | 75d → 6d | none → 39 | constraint start no earlier than 2019-06-17 → none; resources none → Ina Integration |
| 43 | Refinement 3 | 2019-07-08 → 2019-08-05 08:00 (+28d) | 2019-07-08 → 2019-08-05 12:00 (+28d) |  | 74d → 4.5d | none → 34SS+5d | constraint start no earlier than 2019-07-08 → none; resources none → Gerrit Peitz; Leon König; Luca Siekmann; Lukas Schmidt; Robin Behrendt |
| 44 | Betriebshandbuch erstellen 3 | 2019-07-04 → 2019-08-09 13:00 (+36d) | 2019-07-05 → 2019-08-09 17:00 (+35d) | 1d? → 0.5d | 75d → 0d | none → 35 | constraint none → as late as possible; resources none → Gerrit Peitz; Leon König; Luca Siekmann; Robin Behrendt |
| 45 | Sprint Review & Retrospektive 3 | 2019-07-15 → 2019-08-09 13:00 (+25d) | 2019-07-15 → 2019-08-09 17:00 (+25d) |  | 69d → 0d | none → 34SS+9.5d | constraint start no earlier than 2019-07-15 → none; resources none → Gerrit Peitz; Leon König; Luca Siekmann; Lukas Schmidt; Robin Behrendt |
| 46 | **Sprint 4** | 2019-07-04 → 2019-08-12 08:00 (+39d) | 2019-07-29 → 2019-08-23 17:00 (+25d) | 17d? → 10d | 59d → 0d | none → 33 |  |
| 47 | Sprint Planning 4 | 2019-07-15 → 2019-08-12 08:00 (+28d) | 2019-07-15 → 2019-08-12 12:00 (+28d) |  | 69d → 0d | none → 33 | constraint start no earlier than 2019-07-15 → none; resources none → Gerrit Peitz; Leon König; Leon Kuß; Luca Siekmann; Lukas Schmidt; Robin Behrendt |
| 48 | Prozesse implementieren 3 | 2019-07-04 → 2019-08-12 13:00 (+39d) | 2019-07-05 → 2019-08-22 12:00 (+48d) | 1d? → 8d | 75d → 1d | none → 47 | resources none → Gerrit Peitz; Leon König; Luca Siekmann; Robin Behrendt |
| 49 | Test durchführen 3 | 2019-07-04 → 2019-08-12 08:00 (+39d) | 2019-07-05 → 2019-08-13 12:00 (+39d) | 1d → 1.5d | 75d → 1.5d | none → 37 | constraint start no earlier than 2019-07-01 → none; resources none → Petra Prüfung; Theo Test [80%]; Leon Kuß |
| 50 | Test vorbereiten 4 | 2019-07-15 → 2019-08-13 13:00 (+29d) | 2019-07-15 → 2019-08-14 17:00 (+30d) | 1d → 1.5d | 68.5d → 7d | none → 49 | constraint start no earlier than 2019-07-15 → none; resources none → Petra Prüfung; Theo Test; Leon Kuß |
| 51 | Fehler beheben 3 | 2019-07-04 → 2019-08-14 08:00 (+41d) | 2019-07-05 → 2019-08-14 17:00 (+40d) |  | 75d → 1.5d | none → 49FS+0.5d | constraint start no earlier than 2019-07-01 → none; resources none → Luca Siekmann |
| 52 | Software installieren 3 | 2019-07-04 → 2019-08-15 08:00 (+42d) | 2019-07-05 → 2019-08-15 12:00 (+41d) | 1d → 0.5d | 75d → 1.5d | none → 51 | constraint start no earlier than 2019-07-01 → none; resources none → Ina Integration |
| 53 | Nutzerakzeptanzumfrage durchführen 3 | 2019-07-04 → 2019-08-19 13:00 (+46d) | 2019-07-05 → 2019-08-19 17:00 (+45d) | 1d → 0.5d | 75d → 1.5d | none → 52FS+2d | constraint start no earlier than 2019-07-01 → none; resources none → Andreas Auswertung |
| 54 | Nutzerakzeptanzumfrage auswerten 3 | 2019-07-04 → 2019-08-22 08:00 (+49d) | 2019-07-05 → 2019-08-22 12:00 (+48d) | 1d → 0.5d | 75d → 1.5d | none → 53FS+2d | constraint start no earlier than 2019-07-01 → none; resources none → Andreas Auswertung |
| 55 | Performanceziele überprüfen 3 | 2019-07-04 → 2019-08-15 13:00 (+42d) | 2019-07-05 → 2019-08-15 17:00 (+41d) | 1d → 0.5d | 75d → 6d | none → 52 | constraint start no earlier than 2019-07-01 → none; resources none → Ina Integration |
| 56 | Refinement 4 | 2019-07-22 → 2019-08-19 08:00 (+28d) | 2019-07-22 → 2019-08-19 12:00 (+28d) |  | 64d → 4.5d | none → 47SS+5d | constraint start no earlier than 2019-07-22 → none; resources none → Gerrit Peitz; Leon König; Luca Siekmann; Robin Behrendt; Lukas Schmidt |
| 57 | Betriebshandbuch erstellen 4 | 2019-07-04 → 2019-08-23 13:00 (+50d) | 2019-07-05 → 2019-08-23 17:00 (+49d) | 1d? → 0.5d | 75d → 0d | none → 48 | constraint none → as late as possible; resources none → Gerrit Peitz; Leon König; Luca Siekmann; Robin Behrendt |
| 58 | Sprint Review & Retrospektive 4 | 2019-07-29 → 2019-08-23 13:00 (+25d) | 2019-07-29 → 2019-08-23 17:00 (+25d) |  | 59d → 0d | none → 47SS+9.5d | constraint start no earlier than 2019-07-29 → none; resources none → Gerrit Peitz; Leon König; Luca Siekmann; Lukas Schmidt; Robin Behrendt |
| 59 | **Sprint 5** | 2019-07-04 → 2019-08-26 08:00 (+53d) | 2019-08-12 → 2019-09-06 17:00 (+25d) | 27d? → 10d | 49d → 0d | none → 46 |  |
| 60 | Sprint Planning 5 | 2019-07-29 → 2019-08-26 08:00 (+28d) | 2019-07-29 → 2019-08-26 12:00 (+28d) |  | 59d → 0d | none → 46 | constraint start no earlier than 2019-07-29 → none; resources none → Gerrit Peitz; Leon König; Leon Kuß; Luca Siekmann; Lukas Schmidt; Robin Behrendt |
| 61 | Prozesse implementieren 4 | 2019-07-04 → 2019-08-26 13:00 (+53d) | 2019-07-05 → 2019-09-05 12:00 (+62d) | 1d? → 8d | 75d → 1d | none → 60 | resources none → Gerrit Peitz; Leon König; Luca Siekmann; Robin Behrendt |
| 62 | Test durchführen 4 | 2019-07-15 → 2019-08-26 08:00 (+42d) | 2019-07-15 → 2019-08-27 12:00 (+43d) | 1d → 1.5d | 68.5d → 1.5d | none → 50 | constraint start no earlier than 2019-07-15 → none; resources none → Petra Prüfung; Theo Test; Leon Kuß |
| 63 | Test vorbereiten 5 | 2019-07-29 → 2019-08-27 13:00 (+29d) | 2019-07-29 → 2019-08-28 17:00 (+30d) | 1d → 1.5d | 58.5d → 7d | none → 62 | constraint start no earlier than 2019-07-29 → none; resources none → Petra Prüfung; Theo Test; Leon Kuß |
| 64 | Fehler beheben 4 | 2019-07-15 → 2019-08-28 08:00 (+44d) | 2019-07-15 → 2019-08-28 17:00 (+44d) |  | 68.5d → 1.5d | none → 62FS+0.5d | constraint start no earlier than 2019-07-15 → none; resources none → Gerrit Peitz |
| 65 | Software installieren 4 | 2019-07-15 → 2019-08-29 08:00 (+45d) | 2019-07-15 → 2019-08-29 12:00 (+45d) | 1d → 0.5d | 68.5d → 1.5d | none → 64 | constraint start no earlier than 2019-07-15 → none; resources none → Ina Integration |
| 66 | Nutzerakzeptanzumfrage durchführen 4 | 2019-07-15 → 2019-09-02 13:00 (+49d) | 2019-07-15 → 2019-09-02 17:00 (+49d) | 1d → 0.5d | 68.5d → 1.5d | none → 65FS+2d | constraint start no earlier than 2019-07-15 → none; resources none → Andreas Auswertung |
| 67 | Nutzerakzeptanzumfrage auswerten 4 | 2019-07-15 → 2019-09-05 08:00 (+52d) | 2019-07-15 → 2019-09-05 12:00 (+52d) | 1d → 0.5d | 68.5d → 1.5d | none → 66FS+2d | constraint start no earlier than 2019-07-15 → none; resources none → Andreas Auswertung |
| 68 | Performanceziele überprüfen 4 | 2019-07-15 → 2019-08-29 13:00 (+45d) | 2019-07-15 → 2019-08-29 17:00 (+45d) | 1d → 0.5d | 68.5d → 6d | none → 65 | constraint start no earlier than 2019-07-15 → none; resources none → Ina Integration |
| 69 | Refinement 5 | 2019-08-05 → 2019-09-02 08:00 (+28d) | 2019-08-05 → 2019-09-02 12:00 (+28d) |  | 54d → 4.5d | none → 60SS+5d | constraint start no earlier than 2019-08-05 → none; resources none → Gerrit Peitz; Leon König; Luca Siekmann; Lukas Schmidt; Robin Behrendt |
| 70 | Betriebshandbuch erstellen 5 | 2019-07-04 → 2019-09-06 13:00 (+64d) | 2019-07-05 → 2019-09-06 17:00 (+63d) | 1d? → 0.5d | 75d → 0d | none → 61 | constraint none → as late as possible; resources none → Gerrit Peitz; Leon König; Luca Siekmann; Robin Behrendt |
| 71 | Sprint Review & Retrospektive 5 | 2019-08-12 → 2019-09-06 13:00 (+25d) | 2019-08-12 → 2019-09-06 17:00 (+25d) |  | 49d → 0d | none → 60SS+9.5d | constraint start no earlier than 2019-08-12 → none; resources none → Gerrit Peitz; Leon König; Luca Siekmann; Lukas Schmidt; Robin Behrendt |

| ID | Task | Start | Finish | Duration | Total float | Predecessors | Other |
| --- | --- | --- | --- | --- | --- | --- | --- |
| 72 | **Sprint 6** | 2019-07-04 → 2019-09-09 08:00 (+67d) | 2019-08-26 → 2019-09-20 17:00 (+25d) | 37d? → 10d | 39d → 0d | none → 59 |  |
| 73 | Sprint Planning 6 | 2019-08-12 → 2019-09-09 08:00 (+28d) | 2019-08-12 → 2019-09-09 12:00 (+28d) |  | 49d → 0d | none → 59 | constraint start no earlier than 2019-08-12 → none; resources none → Gerrit Peitz; Leon König; Leon Kuß; Luca Siekmann; Lukas Schmidt; Robin Behrendt |
| 74 | "Schmankerl" implementieren 1 | 2019-07-04 → 2019-09-09 13:00 (+67d) | 2019-07-05 → 2019-09-19 12:00 (+76d) | 1d? → 8d | 75d → 1d | none → 73 | resources none → Gerrit Peitz; Leon König; Luca Siekmann; Robin Behrendt |
| 75 | Test durchführen 5 | 2019-07-29 → 2019-09-09 08:00 (+42d) | 2019-07-29 → 2019-09-10 12:00 (+43d) | 1d → 1.5d | 58.5d → 1.5d | none → 63 | constraint start no earlier than 2019-07-29 → none; resources none → Petra Prüfung; Theo Test; Leon Kuß |
| 76 | Test vorbereiten 6 | 2019-08-12 → 2019-09-10 13:00 (+29d) | 2019-08-12 → 2019-09-11 17:00 (+30d) | 1d → 1.5d | 48.5d → 7d | none → 75 | constraint start no earlier than 2019-08-12 → none; resources none → Petra Prüfung; Theo Test; Leon Kuß |
| 77 | Fehler beheben 5 | 2019-07-29 → 2019-09-11 08:00 (+44d) | 2019-07-29 → 2019-09-11 17:00 (+44d) |  | 58.5d → 1.5d | none → 75FS+0.5d | constraint start no earlier than 2019-07-29 → none; resources none → Leon König |
| 78 | Software installieren 5 | 2019-07-29 → 2019-09-12 08:00 (+45d) | 2019-07-29 → 2019-09-12 12:00 (+45d) | 1d → 0.5d | 58.5d → 1.5d | none → 77 | constraint start no earlier than 2019-07-29 → none; resources none → Ina Integration |
| 79 | Nutzerakzeptanzumfrage durchführen 5 | 2019-07-29 → 2019-09-16 13:00 (+49d) | 2019-07-29 → 2019-09-16 17:00 (+49d) | 1d → 0.5d | 58.5d → 1.5d | none → 78FS+2d | constraint start no earlier than 2019-07-29 → none; resources none → Andreas Auswertung |
| 80 | Nutzerakzeptanzumfrage auswerten 5 | 2019-07-29 → 2019-09-19 08:00 (+52d) | 2019-07-29 → 2019-09-19 12:00 (+52d) | 1d → 0.5d | 58.5d → 1.5d | none → 79FS+2d | constraint start no earlier than 2019-07-29 → none; resources none → Andreas Auswertung |
| 81 | Performanceziele überprüfen 5 | 2019-07-29 → 2019-09-12 13:00 (+45d) | 2019-07-29 → 2019-09-12 17:00 (+45d) | 1d → 0.5d | 58.5d → 6d | none → 78 | constraint start no earlier than 2019-07-29 → none; resources none → Ina Integration |
| 82 | Refinement 6 | 2019-08-19 → 2019-09-16 08:00 (+28d) | 2019-08-19 → 2019-09-16 12:00 (+28d) |  | 44d → 4.5d | none → 73SS+5d | constraint start no earlier than 2019-08-19 → none; resources none → Gerrit Peitz; Leon König; Luca Siekmann; Lukas Schmidt; Robin Behrendt |
| 83 | Betriebshandbuch erstellen 6 | 2019-07-04 → 2019-09-20 13:00 (+78d) | 2019-07-05 → 2019-09-20 17:00 (+77d) | 1d? → 0.5d | 75d → 0d | none → 74 | constraint none → as late as possible; resources none → Gerrit Peitz; Leon König; Luca Siekmann; Robin Behrendt |
| 84 | Sprint Review & Retrospektive 6 | 2019-08-26 → 2019-09-20 13:00 (+25d) | 2019-08-26 → 2019-09-20 17:00 (+25d) |  | 39d → 0d | none → 73SS+9.5d | constraint start no earlier than 2019-08-26 → none; resources none → Gerrit Peitz; Leon König; Luca Siekmann; Lukas Schmidt; Robin Behrendt |
| 85 | **Sprint 7** | 2019-07-04 → 2019-09-23 08:00 (+81d) | 2019-09-09 → 2019-10-04 17:00 (+25d) | 47d? → 9d | 29d → 0d | none → 72 |  |
| 86 | Sprint Planning 7 | 2019-08-26 → 2019-09-23 08:00 (+28d) | 2019-08-26 → 2019-09-23 12:00 (+28d) |  | 39d → 0d | none → 72 | constraint start no earlier than 2019-08-26 → none; resources none → Gerrit Peitz; Leon König; Leon Kuß; Luca Siekmann; Lukas Schmidt; Robin Behrendt |
| 87 | "Schmankerl" implementieren 2 | 2019-07-04 → 2019-09-23 13:00 (+81d) | 2019-07-05 → 2019-10-02 17:00 (+89d) | 1d? → 7.5d | 75d → 0.5d | none → 86 | was named "Schmankerl" implmentieren 2; resources none → Gerrit Peitz; Leon König; Luca Siekmann; Robin Behrendt |
| 88 | Test durchführen 6 | 2019-08-12 → 2019-09-23 08:00 (+42d) | 2019-08-12 → 2019-09-24 12:00 (+43d) | 1d → 1.5d | 48.5d → 1.5d | none → 76 | constraint start no earlier than 2019-08-12 → none; resources none → Petra Prüfung; Theo Test; Leon Kuß |
| 89 | Test vorbereiten 7 | 2019-08-26 → 2019-09-24 13:00 (+29d) | 2019-08-26 → 2019-09-25 17:00 (+30d) | 1d → 1.5d | 38.5d → 6d | none → 88 | constraint start no earlier than 2019-08-26 → none; resources none → Petra Prüfung; Theo Test; Leon Kuß |
| 90 | Fehler beheben 6 | 2019-08-12 → 2019-09-25 08:00 (+44d) | 2019-08-12 → 2019-09-25 17:00 (+44d) |  | 48.5d → 1.5d | none → 88FS+0.5d | constraint start no earlier than 2019-08-12 → none; resources none → Luca Siekmann |
| 91 | Software installieren 6 | 2019-08-12 → 2019-09-26 08:00 (+45d) | 2019-08-12 → 2019-09-26 12:00 (+45d) | 1d → 0.5d | 48.5d → 1.5d | none → 90 | constraint start no earlier than 2019-08-12 → none; resources none → Ina Integration |
| 92 | Nutzerakzeptanzumfrage durchführen 6 | 2019-08-12 → 2019-09-30 13:00 (+49d) | 2019-08-12 → 2019-09-30 17:00 (+49d) | 1d → 0.5d | 48.5d → 1.5d | none → 91FS+2d | constraint start no earlier than 2019-08-12 → none; resources none → Andreas Auswertung |
| 93 | Nutzerakzeptanzumfrage auswerten 6 | 2019-08-12 → 2019-10-02 08:00 (+51d) | 2019-08-12 → 2019-10-02 12:00 (+51d) | 1d → 0.5d | 48.5d → 1.5d | none → 92FS+1d | constraint start no earlier than 2019-08-12 → none; resources none → Andreas Auswertung |
| 94 | Performanceziele überprüfen 6 | 2019-08-12 → 2019-09-26 13:00 (+45d) | 2019-08-12 → 2019-09-26 17:00 (+45d) | 1d → 0.5d | 48.5d → 5d | none → 91 | constraint start no earlier than 2019-08-12 → none; resources none → Ina Integration |
| 95 | Refinement 7 | 2019-09-02 → 2019-09-27 08:00 (+25d) | 2019-09-02 → 2019-09-27 12:00 (+25d) |  | 34d → 4.5d | none → 86SS+4d | constraint start no earlier than 2019-09-02 → none; resources none → Gerrit Peitz; Leon König; Luca Siekmann; Lukas Schmidt; Robin Behrendt |
| 96 | Betriebshandbuch erstellen 7 | 2019-07-04 → 2019-10-04 13:00 (+92d) | 2019-07-05 → 2019-10-04 17:00 (+91d) | 1d? → 0.5d | 75d → 0d | none → 87 | constraint none → as late as possible; resources none → Gerrit Peitz; Leon König; Luca Siekmann; Robin Behrendt |
| 97 | Sprint Review & Retrospektive 7 | 2019-09-09 → 2019-10-04 13:00 (+25d) | 2019-09-09 → 2019-10-04 17:00 (+25d) |  | 29d → 0d | none → 86SS+8.5d | constraint start no earlier than 2019-09-09 → none; resources none → Gerrit Peitz; Leon König; Luca Siekmann; Lukas Schmidt; Robin Behrendt |
| 98 | **Sprint 8** | 2019-07-04 → 2019-10-07 08:00 (+95d) | 2019-09-23 → 2019-10-18 17:00 (+25d) | 57d? → 10d | 19d → 0d | none → 85 |  |
| 99 | Sprint Planning 8 | 2019-09-09 → 2019-10-07 08:00 (+28d) | 2019-09-09 → 2019-10-07 12:00 (+28d) |  | 29d → 0d | none → 85 | constraint start no earlier than 2019-09-09 → none; resources none → Gerrit Peitz; Leon König; Leon Kuß; Luca Siekmann; Lukas Schmidt; Robin Behrendt |
| 100 | "Schmankerl" implementieren 3 | 2019-07-04 → 2019-10-07 13:00 (+95d) | 2019-07-05 → 2019-10-11 12:00 (+98d) | 1d? → 4d | 75d → 1d | none → 99 | resources none → Gerrit Peitz; Leon König; Luca Siekmann; Robin Behrendt |
| 101 | Zusatzfunktionen implementieren 1 | 2019-07-04 → 2019-10-11 13:00 (+99d) | 2019-07-05 → 2019-10-17 12:00 (+104d) | 1d? → 4d | 75d → 1d | none → 99, 100 | resources none → Gerrit Peitz; Leon König; Luca Siekmann; Robin Behrendt |
| 102 | Test durchführen 7 | 2019-08-26 → 2019-10-07 08:00 (+42d) | 2019-08-26 → 2019-10-08 12:00 (+43d) | 1d → 1.5d | 38.5d → 1.5d | none → 89 | constraint start no earlier than 2019-08-26 → none; resources none → Petra Prüfung; Theo Test; Leon Kuß |
| 103 | Test vorbereiten 8 | 2019-09-09 → 2019-10-08 13:00 (+29d) | 2019-09-09 → 2019-10-09 17:00 (+30d) | 1d → 1.5d | 28.5d → 7d | none → 102 | constraint start no earlier than 2019-09-09 → none; resources none → Petra Prüfung; Theo Test; Leon Kuß |
| 104 | Fehler beheben 7 | 2019-08-26 → 2019-10-09 08:00 (+44d) | 2019-08-26 → 2019-10-09 17:00 (+44d) |  | 38.5d → 1.5d | none → 102FS+0.5d | constraint start no earlier than 2019-08-26 → none; resources none → Gerrit Peitz |
| 105 | Software installieren 7 | 2019-08-26 → 2019-10-10 08:00 (+45d) | 2019-08-26 → 2019-10-10 12:00 (+45d) | 1d → 0.5d | 38.5d → 1.5d | none → 104 | constraint start no earlier than 2019-08-26 → none; resources none → Ina Integration |
| 106 | Nutzerakzeptanzumfrage durchführen 7 | 2019-08-26 → 2019-10-14 13:00 (+49d) | 2019-08-26 → 2019-10-14 17:00 (+49d) | 1d → 0.5d | 38.5d → 1.5d | none → 105FS+2d | constraint start no earlier than 2019-08-26 → none; resources none → Andreas Auswertung |
| 107 | Nutzerakzeptanzumfrage auswerten 7 | 2019-08-26 → 2019-10-17 08:00 (+52d) | 2019-08-26 → 2019-10-17 12:00 (+52d) | 1d → 0.5d | 38.5d → 1.5d | none → 106FS+2d | constraint start no earlier than 2019-08-26 → none; resources none → Andreas Auswertung |
| 108 | Performanceziele überprüfen 7 | 2019-08-26 → 2019-10-10 13:00 (+45d) | 2019-08-26 → 2019-10-10 17:00 (+45d) | 1d → 0.5d | 38.5d → 6d | none → 105 | constraint start no earlier than 2019-08-26 → none; resources none → Ina Integration |
| 109 | Refinement 8 | 2019-09-16 → 2019-10-14 08:00 (+28d) | 2019-09-16 → 2019-10-14 12:00 (+28d) |  | 24d → 4.5d | none → 99SS+5d | constraint start no earlier than 2019-09-16 → none; resources none → Gerrit Peitz; Leon König; Luca Siekmann; Lukas Schmidt; Robin Behrendt |
| 110 | Betriebshandbuch erstellen 8 | 2019-07-04 → 2019-10-18 13:00 (+106d) | 2019-07-05 → 2019-10-18 17:00 (+105d) | 1d? → 0.5d | 75d → 0d | none → 101 | constraint none → as late as possible; resources none → Gerrit Peitz; Leon König; Luca Siekmann; Robin Behrendt |
| 111 | Sprint Review & Retrospektive 8 | 2019-09-23 → 2019-10-18 13:00 (+25d) | 2019-09-23 → 2019-10-18 17:00 (+25d) |  | 19d → 0d | none → 99SS+9.5d | constraint start no earlier than 2019-09-23 → none; resources none → Gerrit Peitz; Leon König; Luca Siekmann; Lukas Schmidt; Robin Behrendt |
| 112 | **Sprint 9** | 2019-07-04 → 2019-10-21 08:00 (+109d) | 2019-10-07 → 2019-11-01 17:00 (+25d) | 66d? → 9d | 10d → 0d | none → 98 |  |
| 113 | Sprint Planning 9 | 2019-09-23 → 2019-10-21 08:00 (+28d) | 2019-09-23 → 2019-10-21 12:00 (+28d) |  | 19d → 0d | none → 98 | constraint start no earlier than 2019-09-23 → none; resources none → Gerrit Peitz; Leon König; Leon Kuß; Luca Siekmann; Lukas Schmidt; Robin Behrendt |
| 114 | Zusatzfunktionen implementieren 2 | 2019-07-04 → 2019-10-21 13:00 (+109d) | 2019-07-05 → 2019-10-30 17:00 (+117d) | 1d? → 7.5d | 75d → 0.5d | none → 113 | resources none → Gerrit Peitz; Leon König; Luca Siekmann; Robin Behrendt |
| 115 | Test durchführen 8 | 2019-09-09 → 2019-10-21 08:00 (+42d) | 2019-09-09 → 2019-10-22 12:00 (+43d) | 1d → 1.5d | 28.5d → 1.5d | none → 103 | constraint start no earlier than 2019-09-09 → none; resources none → Petra Prüfung; Theo Test; Leon Kuß |
| 116 | Test vorbereiten 9 | 2019-09-23 → 2019-10-22 13:00 (+29d) | 2019-09-23 → 2019-10-23 17:00 (+30d) | 1d → 1.5d | 18.5d → 6d | none → 115 | constraint start no earlier than 2019-09-23 → none; resources none → Petra Prüfung; Theo Test; Leon Kuß |
| 117 | Fehler beheben 8 | 2019-09-09 → 2019-10-23 08:00 (+44d) | 2019-09-09 → 2019-10-23 17:00 (+44d) |  | 28.5d → 1.5d | none → 115FS+0.5d | constraint start no earlier than 2019-09-09 → none; resources none → Leon König |
| 118 | Software installieren 8 | 2019-09-09 → 2019-10-24 08:00 (+45d) | 2019-09-09 → 2019-10-24 12:00 (+45d) | 1d → 0.5d | 28.5d → 1.5d | none → 117 | constraint start no earlier than 2019-09-09 → none; resources none → Ina Integration |
| 119 | Nutzerakzeptanzumfrage durchführen 8 | 2019-09-09 → 2019-10-28 13:00 (+49d) | 2019-09-09 → 2019-10-28 17:00 (+49d) | 1d → 0.5d | 28.5d → 1.5d | none → 118FS+2d | constraint start no earlier than 2019-09-09 → none; resources none → Andreas Auswertung |
| 120 | Nutzerakzeptanzumfrage auswerten 8 | 2019-09-09 → 2019-10-30 08:00 (+51d) | 2019-09-09 → 2019-10-30 12:00 (+51d) | 1d → 0.5d | 28.5d → 1.5d | none → 119FS+1d | constraint start no earlier than 2019-09-09 → none; resources none → Andreas Auswertung |
| 121 | Performanceziele überprüfen 8 | 2019-09-09 → 2019-10-24 13:00 (+45d) | 2019-09-09 → 2019-10-24 17:00 (+45d) | 1d → 0.5d | 28.5d → 5d | none → 118 | constraint start no earlier than 2019-09-09 → none; resources none → Ina Integration |
| 122 | Refinement 9 | 2019-09-30 → 2019-10-25 08:00 (+25d) | 2019-09-30 → 2019-10-25 12:00 (+25d) |  | 14d → 4.5d | none → 113SS+4d | constraint start no earlier than 2019-09-30 → none; resources none → Gerrit Peitz; Leon König; Luca Siekmann; Lukas Schmidt; Robin Behrendt |
| 123 | Betriebshandbuch erstellen 9 | 2019-07-04 → 2019-11-01 13:00 (+120d) | 2019-07-05 → 2019-11-01 17:00 (+119d) | 1d? → 0.5d | 75d → 0d | none → 114 | constraint none → as late as possible; resources none → Gerrit Peitz; Leon König; Luca Siekmann; Robin Behrendt |
| 124 | Sprint Review & Retrospektive 9 | 2019-10-07 → 2019-11-01 13:00 (+25d) | 2019-10-07 → 2019-11-01 17:00 (+25d) |  | 10d → 0d | none → 113SS+8.5d | constraint start no earlier than 2019-10-07 → none; resources none → Gerrit Peitz; Leon König; Luca Siekmann; Lukas Schmidt; Robin Behrendt |
| 125 | **Sprint 10** | 2019-07-04 → 2019-11-04 08:00 (+123d) | 2019-10-21 → 2019-11-15 17:00 (+25d) | 76d? → 10d |  | none → 112 |  |
| 126 | Sprint Planning 10 | 2019-07-04 → 2019-11-04 08:00 (+123d) | 2019-07-04 → 2019-11-04 12:00 (+123d) |  | 75.5d → 0d | none → 112 | resources none → Gerrit Peitz; Leon König; Leon Kuß; Luca Siekmann; Lukas Schmidt; Robin Behrendt |
| 127 | Zusatzfunktionen implementieren 3 | 2019-07-04 → 2019-11-04 13:00 (+123d) | 2019-07-05 → 2019-11-14 12:00 (+132d) | 1d? → 8d | 75d → 1d | none → 126 | resources none → Gerrit Peitz; Leon König; Luca Siekmann; Robin Behrendt |
| 128 | Test durchführen 9 | 2019-09-23 → 2019-11-04 08:00 (+42d) | 2019-09-23 → 2019-11-05 12:00 (+43d) | 1d → 1.5d | 18.5d → 1.5d | none → 116 | constraint start no earlier than 2019-09-23 → none; resources none → Petra Prüfung; Theo Test; Leon Kuß |
| 129 | Test vorbereiten 10 | 2019-10-07 → 2019-11-05 13:00 (+29d) | 2019-10-07 → 2019-11-06 17:00 (+30d) | 1d → 1.5d | 9.5d → 7d | none → 128 | constraint start no earlier than 2019-10-07 → none; resources none → Petra Prüfung; Theo Test; Leon Kuß |
| 130 | Fehler beheben 9 | 2019-09-23 → 2019-11-06 08:00 (+44d) | 2019-09-23 → 2019-11-06 17:00 (+44d) |  | 18.5d → 1.5d | none → 128FS+0.5d | constraint start no earlier than 2019-09-23 → none; resources none → Luca Siekmann |
| 131 | Software installieren 9 | 2019-09-23 → 2019-11-07 08:00 (+45d) | 2019-09-23 → 2019-11-07 12:00 (+45d) | 1d → 0.5d | 18.5d → 1.5d | none → 130 | constraint start no earlier than 2019-09-23 → none; resources none → Ina Integration |
| 132 | Nutzerakzeptanzumfrage durchführen 9 | 2019-09-23 → 2019-11-11 13:00 (+49d) | 2019-09-23 → 2019-11-11 17:00 (+49d) | 1d → 0.5d | 18.5d → 1.5d | none → 131FS+2d | constraint start no earlier than 2019-09-23 → none; resources none → Andreas Auswertung |
| 133 | Nutzerakzeptanzumfrage auswerten 9 | 2019-09-23 → 2019-11-14 08:00 (+52d) | 2019-09-23 → 2019-11-14 12:00 (+52d) | 1d → 0.5d | 18.5d → 1.5d | none → 132FS+2d | constraint start no earlier than 2019-09-23 → none; resources none → Andreas Auswertung |
| 134 | Performanceziele überprüfen 9 | 2019-09-23 → 2019-11-07 13:00 (+45d) | 2019-09-23 → 2019-11-07 17:00 (+45d) | 1d → 0.5d | 18.5d → 6d | none → 131 | constraint start no earlier than 2019-09-23 → none; resources none → Ina Integration |
| 135 | Refinement 10 | 2019-10-14 → 2019-11-11 08:00 (+28d) | 2019-10-14 → 2019-11-11 12:00 (+28d) |  | 5d → 4.5d | none → 126SS+5d | constraint start no earlier than 2019-10-14 → none; resources none → Gerrit Peitz; Leon König; Luca Siekmann; Lukas Schmidt; Robin Behrendt |
| 136 | Betriebshandbuch erstellen 10 | 2019-07-04 → 2019-11-15 13:00 (+134d) | 2019-07-05 → 2019-11-15 17:00 (+133d) | 1d? → 0.5d | 75d → 0d | none → 127 | constraint none → as late as possible; resources none → Gerrit Peitz; Leon König; Luca Siekmann; Robin Behrendt |
| 137 | Sprint Review & Retrospektive 10 | 2019-10-21 → 2019-11-15 13:00 (+25d) | 2019-10-21 → 2019-11-15 17:00 (+25d) |  |  | none → 126SS+9.5d | constraint start no earlier than 2019-10-21 → none; resources none → Gerrit Peitz; Leon König; Luca Siekmann; Lukas Schmidt; Robin Behrendt |
| 138 | **Finalisierungsphase** | 2019-07-04 → 2019-11-18 08:00 (+137d) | 2019-10-07 → 2019-11-28 12:00 (+52d) | 66.5d? → 8.5d | 9.5d → 0d | none → 125 | was named Sprint 11 |
| 139 | Test durchführen 10 | 2019-10-07 → 2019-11-18 08:00 (+42d) | 2019-10-07 → 2019-11-19 12:00 (+43d) | 1d → 1.5d | 9.5d → 0d | none → 129 | constraint start no earlier than 2019-10-07 → none; resources none → Petra Prüfung; Theo Test; Leon Kuß |
| 140 | Fehler beheben 10 | 2019-10-07 → 2019-11-20 08:00 (+44d) | 2019-10-07 → 2019-11-20 17:00 (+44d) |  | 9.5d → 0d | none → 139FS+0.5d | constraint start no earlier than 2019-10-07 → none; resources none → Leon König |
| 141 | Software installieren 10 | 2019-10-07 → 2019-11-21 08:00 (+45d) | 2019-10-07 → 2019-11-21 12:00 (+45d) | 1d → 0.5d | 9.5d → 0d | none → 140 | constraint start no earlier than 2019-10-07 → none; resources none → Ina Integration |

| ID | Task | Start | Finish | Duration | Total float | Predecessors | Other |
| --- | --- | --- | --- | --- | --- | --- | --- |
| 142 | Nutzerakzeptanzumfrage durchführen 10 | 2019-10-07 → 2019-11-25 13:00 (+49d) | 2019-10-07 → 2019-11-25 17:00 (+49d) | 1d → 0.5d | 9.5d → 0d | none → 141FS+2d | constraint start no earlier than 2019-10-07 → none; resources none → Andreas Auswertung |
| 143 | Nutzerakzeptanzumfrage auswerten 10 | 2019-10-07 → 2019-11-28 08:00 (+52d) | 2019-10-07 → 2019-11-28 12:00 (+52d) | 1d → 0.5d | 9.5d → 0d | none → 142FS+2d | constraint start no earlier than 2019-10-07 → none; resources none → Andreas Auswertung |
| 144 | Performanceziele überprüfen 10 | 2019-10-07 → 2019-11-21 13:00 (+45d) | 2019-10-07 → 2019-11-21 17:00 (+45d) | 1d → 0.5d | 9.5d → 4.5d | none → 141 | constraint start no earlier than 2019-10-07 → none; resources none → Ina Integration |
| 145 | Schulungskonzept erarbeiten | 2019-07-04 → 2019-11-18 08:00 (+137d) | 2019-07-05 → 2019-11-27 17:00 (+145d) | 1d? → 8d | 75d → 0.5d | none → 125 | was named Schulungskonzept erarbeiten 1; resources none → Tobias Training |

## Version 4 (saved 2019-05-16)

Note of the change: MS Project Planung final

Last finish 2019-11-28 → 2019-11-27 (-1d).

Added:

| ID | Task | Duration | Start | Finish | Predecessors |
| --- | --- | --- | --- | --- | --- |
| 1 | **Projekt "Intranet für die KlinikIT"** | 126d | 2019-06-03 08:00 | 2019-11-27 17:00 |  |
| 108 | Schulung durchführen | 10d | 2019-11-01 13:00 | 2019-11-15 12:00 | 100FS+1d |

Removed: 61 Prozesse implementieren 4; 98 Sprint 8; 99 Sprint Planning 8; 100 "Schmankerl" implementieren 3; 102 Test durchführen 7; 103 Test vorbereiten 8; 104 Fehler beheben 7; 105 Software installieren 7; 106 Nutzerakzeptanzumfrage durchführen 7; 107 Nutzerakzeptanzumfrage auswerten 7; 108 Performanceziele überprüfen 7; 109 Refinement 8; 110 Betriebshandbuch erstellen 8; 111 Sprint Review & Retrospektive 8; 112 Sprint 9; 113 Sprint Planning 9; 115 Test durchführen 8; 116 Test vorbereiten 9; 117 Fehler beheben 8; 118 Software installieren 8; 119 Nutzerakzeptanzumfrage durchführen 8; 120 Nutzerakzeptanzumfrage auswerten 8; 121 Performanceziele überprüfen 8; 122 Refinement 9; 123 Betriebshandbuch erstellen 9; 124 Sprint Review & Retrospektive 9; 125 Sprint 10; 126 Sprint Planning 10; 127 Zusatzfunktionen implementieren 3; 128 Test durchführen 9; 129 Test vorbereiten 10; 130 Fehler beheben 9; 131 Software installieren 9; 132 Nutzerakzeptanzumfrage durchführen 9; 133 Nutzerakzeptanzumfrage auswerten 9; 134 Performanceziele überprüfen 9; 135 Refinement 10; 136 Betriebshandbuch erstellen 10; 137 Sprint Review & Retrospektive 10

Changed:

| ID | Task | Start | Finish | Duration | Total float | Predecessors | Other |
| --- | --- | --- | --- | --- | --- | --- | --- |
| 12 | **Realisierungsphase** |  | 2019-11-28 12:00 → 2019-10-30 12:00 (-29d) | 106.5d → 86.5d |  |  |  |
| 13 | **Entwicklungssprints** |  | 2019-11-15 17:00 → 2019-10-18 17:00 (-28d) | 98d → 79d |  |  | was named Sprints |
| 16 | Kernsystem implementieren |  | 2019-07-11 17:00 → 2019-07-11 12:00 | 8.5d → 8d |  |  |  |
| 17 | Test vorbereiten 1 |  |  |  |  |  | resources Theo Test; Petra Prüfung; Leon Kuß → Theo Test; Leon Kuß |
| 19 | Betriebshandbuch erstellen 1 | 2019-07-12 08:00 → 2019-07-11 13:00 (-1d) |  | 0.5d → 1d |  |  |  |
| 20 | Sprint Review & Retrospektive 1 |  |  |  |  |  | resources Lukas Schmidt; Dennis Design; Leon König; Luca Siekmann; Robin Behrendt → Lukas Schmidt; Leon König; Luca Siekmann; Robin Behrendt; Gerrit Peitz |
| 22 | Sprint Planning 2 |  |  |  |  |  | resources Lukas Schmidt; Leon König; Leon Kuß; Luca Siekmann; Robin Behrendt; Gerrit Peitz → Lukas Schmidt; Leon König; Leon Kuß; Robin Behrendt; Gerrit Peitz |
| 24 | Test durchführen 1 |  | 2019-07-16 11:23 → 2019-07-16 12:00 | 1.42d → 1.5d |  |  | resources Theo Test; Petra Prüfung; Leon Kuß → Theo Test; Leon Kuß |
| 25 | Test vorbereiten 2 | 2019-07-16 11:23 → 2019-07-16 13:00 | 2019-07-17 17:00 → 2019-07-18 17:00 (+1d) | 1.58d → 2.5d | 7d → 6d |  | resources Petra Prüfung; Theo Test [80%]; Leon Kuß → Theo Test [80%]; Leon Kuß |
| 26 | Fehler beheben 1 | 2019-07-16 16:23 → 2019-07-17 08:00 (+1d) |  |  |  |  | resources Gerrit Peitz → Gerrit Peitz [108.3%] |
| 32 | Betriebshandbuch erstellen 2 | 2019-07-26 13:00 → 2019-07-25 13:00 (-1d) | 2019-07-26 17:00 → 2019-07-26 12:00 | 0.5d → 1d | 0d → 0.5d |  | constraint as late as possible → none; resources Robin Behrendt; Gerrit Peitz; Leon König; Luca Siekmann → Robin Behrendt [63.6%]; Gerrit Peitz [63.6%]; Leon König [63.6%]; Luca Siekmann [63.6%] |
| 33 | Sprint Review & Retrospektive 2 |  |  |  |  |  | resources Lukas Schmidt; Dennis Design; Leon König; Luca Siekmann; Robin Behrendt → Lukas Schmidt; Leon König; Luca Siekmann; Robin Behrendt; Gerrit Peitz |
| 37 | Test durchführen 2 |  |  |  | 1.5d → 2d |  | resources Theo Test; Petra Prüfung; Leon Kuß → Theo Test; Leon Kuß |
| 38 | Test vorbereiten 3 |  | 2019-07-31 17:00 → 2019-08-01 17:00 (+1d) | 1.5d → 2.5d | 7d → 9.5d |  | resources Petra Prüfung; Theo Test [80%]; Leon Kuß → Theo Test [80%]; Leon Kuß |
| 39 | Fehler beheben 2 |  |  |  | 1.5d → 2d |  | resources Leon König → Leon König [200%] |
| 44 | Refinement 3 |  |  |  | 4.5d → 8d |  | resources Gerrit Peitz; Leon König; Luca Siekmann; Lukas Schmidt; Robin Behrendt → Gerrit Peitz; Luca Siekmann; Lukas Schmidt; Robin Behrendt |
| 45 | Betriebshandbuch erstellen 3 | 2019-08-09 13:00 → 2019-08-08 13:00 (-1d) | 2019-08-09 17:00 → 2019-08-09 12:00 | 0.5d → 1d | 0d → 4d |  | constraint as late as possible → none; resources Gerrit Peitz; Leon König; Luca Siekmann; Robin Behrendt → Gerrit Peitz; Luca Siekmann; Robin Behrendt |
| 46 | Sprint Review & Retrospektive 3 |  |  |  | 0d → 3.5d |  | resources Gerrit Peitz; Leon König; Luca Siekmann; Lukas Schmidt; Robin Behrendt → Gerrit Peitz; Luca Siekmann; Lukas Schmidt; Robin Behrendt |
| 48 | Sprint Planning 4 |  |  |  | 0d → 4.5d |  | resources Gerrit Peitz; Leon König; Leon Kuß; Luca Siekmann; Lukas Schmidt; Robin Behrendt → Gerrit Peitz; Leon Kuß; Luca Siekmann; Lukas Schmidt; Robin Behrendt |
| 49 | Prozesse implementieren 3 |  | 2019-08-22 12:00 → 2019-08-16 17:00 (-6d) | 8d → 4.5d | 1d → 5d |  | resources Gerrit Peitz; Leon König; Luca Siekmann; Robin Behrendt → Gerrit Peitz; Luca Siekmann; Robin Behrendt |
| 50 | "Schmankerl" implementieren 1 | 2019-09-09 13:00 → 2019-08-19 08:00 (-21d) | 2019-09-19 12:00 → 2019-08-22 12:00 (-28d) | 8d → 3.5d | 1d → 5d | 75 → 48, 49 |  |
| 51 | Test durchführen 3 |  |  |  | 1.5d → 3.5d |  | resources Petra Prüfung; Theo Test [80%]; Leon Kuß → Theo Test [140%]; Leon Kuß |
| 52 | Test vorbereiten 4 |  | 2019-08-14 17:00 → 2019-08-15 17:00 (+1d) | 1.5d → 2.5d | 7d → 10.5d |  | resources Petra Prüfung; Theo Test; Leon Kuß → Theo Test; Leon Kuß |
| 59 | Betriebshandbuch erstellen 4 | 2019-08-23 13:00 → 2019-08-22 13:00 (-1d) | 2019-08-23 17:00 → 2019-08-23 12:00 | 0.5d → 1d | 0d → 5d | 49 → 50 | constraint as late as possible → none |
| 63 | "Schmankerl" implementieren 2 | 2019-09-23 13:00 → 2019-08-26 13:00 (-28d) | 2019-10-02 17:00 → 2019-09-05 12:00 (-27d) | 7.5d → 8d | 0.5d → 11d | 88 → 62 |  |
| 64 | Test durchführen 4 |  |  |  | 1.5d → 17d |  | resources Petra Prüfung; Theo Test; Leon Kuß → Theo Test; Leon Kuß |
| 65 | Test vorbereiten 5 |  | 2019-08-28 17:00 → 2019-08-29 17:00 (+1d) | 1.5d → 2.5d | 7d → 21.5d |  | resources Petra Prüfung; Theo Test; Leon Kuß → Theo Test; Leon Kuß |
| 71 | Refinement 5 | 2019-09-02 08:00 → 2019-08-30 17:00 (-3d) |  |  | 4.5d → 20d |  |  |
| 72 | Betriebshandbuch erstellen 5 | 2019-09-06 13:00 → 2019-09-05 13:00 (-1d) | 2019-09-06 17:00 → 2019-09-06 12:00 | 0.5d → 1d | 0d → 11d | Prozesse implementieren 4 → 63 | constraint as late as possible → none; resources Gerrit Peitz; Leon König; Luca Siekmann; Robin Behrendt → Leon König; Luca Siekmann; Robin Behrendt |
| 73 | Sprint Review & Retrospektive 5 | 2019-09-06 13:00 → 2019-09-06 12:00 |  |  | 0d → 15.5d |  |  |
| 74 | **Sprint 6** |  | 2019-09-20 17:00 → 2019-10-07 17:00 (+17d) | 10d → 20d | 0d → 8.5d |  |  |
| 75 | Sprint Planning 6 |  | 2019-09-09 12:00 → 2019-09-12 17:00 (+3d) | 0.5d → 4d | 0d → 15.5d |  | resources Gerrit Peitz; Leon König; Leon Kuß; Luca Siekmann; Lukas Schmidt; Robin Behrendt → Leon König; Leon Kuß; Luca Siekmann; Lukas Schmidt; Robin Behrendt |
| 76 | Zusatzfunktionen implementieren 1 | 2019-10-11 13:00 → 2019-09-13 08:00 (-28d) | 2019-10-17 12:00 → 2019-10-01 17:00 (-16d) | 4d → 10d | 1d → 10.5d | Sprint Planning 8, "Schmankerl" implementieren 3 → 75 |  |
| 77 | Test durchführen 5 |  |  |  | 1.5d → 20d |  | resources Petra Prüfung; Theo Test; Leon Kuß → Theo Test; Leon Kuß |
| 78 | Test vorbereiten 6 |  | 2019-09-11 17:00 → 2019-09-12 17:00 (+1d) | 1.5d → 2.5d | 7d → 24.5d |  | resources Petra Prüfung; Theo Test; Leon Kuß → Theo Test [150%]; Leon Kuß [150%] |
| 84 | Refinement 6 |  | 2019-09-16 12:00 → 2019-09-18 17:00 (+2d) | 0.5d → 3d | 4.5d → 20.5d |  |  |
| 85 | Betriebshandbuch erstellen 6 | 2019-09-20 13:00 → 2019-10-02 08:00 (+12d) | 2019-09-20 17:00 → 2019-10-07 17:00 (+17d) | 0.5d → 2d | 0d → 8.5d | 50 → 76 | constraint as late as possible → none |
| 87 | **Sprint 7** | 2019-09-23 08:00 → 2019-10-08 08:00 (+15d) | 2019-10-04 17:00 → 2019-10-18 17:00 (+14d) |  | 0d → 8.5d |  |  |
| 88 | Sprint Planning 7 | 2019-09-23 08:00 → 2019-10-08 08:00 (+15d) | 2019-09-23 12:00 → 2019-10-08 12:00 (+15d) |  | 0d → 8.5d |  | resources Gerrit Peitz; Leon König; Leon Kuß; Luca Siekmann; Lukas Schmidt; Robin Behrendt → Gerrit Peitz; Leon König; Leon Kuß; Luca Siekmann; Lukas Schmidt |
| 89 | Zusatzfunktionen implementieren 2 | 2019-10-21 13:00 → 2019-10-08 13:00 (-13d) | 2019-10-30 17:00 → 2019-10-17 12:00 (-13d) | 7.5d → 7d | 0.5d → 9d | Sprint Planning 9 → 88 |  |
| 90 | Test durchführen 6 | 2019-09-23 08:00 → 2019-10-08 08:00 (+15d) | 2019-09-24 12:00 → 2019-10-09 12:00 (+15d) |  | 1.5d → 10d |  | resources Petra Prüfung; Theo Test; Leon Kuß → Theo Test; Leon Kuß |
| 91 | Test vorbereiten 7 | 2019-09-24 13:00 → 2019-10-09 13:00 (+15d) | 2019-09-25 17:00 → 2019-10-11 17:00 (+16d) | 1.5d → 2.5d | 6d → 13.5d |  | resources Petra Prüfung; Theo Test; Leon Kuß → Theo Test [150%]; Leon Kuß [150%] |
| 92 | Fehler beheben 6 | 2019-09-25 08:00 → 2019-10-10 08:00 (+15d) | 2019-09-25 17:00 → 2019-10-10 17:00 (+15d) |  | 1.5d → 10d |  |  |
| 93 | Software installieren 6 | 2019-09-26 08:00 → 2019-10-11 08:00 (+15d) | 2019-09-26 12:00 → 2019-10-11 12:00 (+15d) |  | 1.5d → 10d |  |  |
| 94 | Nutzerakzeptanzumfrage durchführen 6 | 2019-09-30 13:00 → 2019-10-15 13:00 (+15d) | 2019-09-30 17:00 → 2019-10-15 17:00 (+15d) |  | 1.5d → 10d |  |  |
| 95 | Nutzerakzeptanzumfrage auswerten 6 | 2019-10-02 08:00 → 2019-10-17 08:00 (+15d) | 2019-10-02 12:00 → 2019-10-17 12:00 (+15d) |  | 1.5d → 10d |  |  |
| 96 | Performanceziele überprüfen 6 | 2019-09-26 13:00 → 2019-10-11 13:00 (+15d) | 2019-09-26 17:00 → 2019-10-11 17:00 (+15d) |  | 5d → 13.5d |  |  |
| 97 | Refinement 7 | 2019-09-27 08:00 → 2019-10-15 08:00 (+18d) | 2019-09-27 12:00 → 2019-10-15 12:00 (+18d) |  | 4.5d → 12d | 88SS+4d → 88SS+5d | resources Gerrit Peitz; Leon König; Luca Siekmann; Lukas Schmidt; Robin Behrendt → Gerrit Peitz; Leon König; Luca Siekmann; Lukas Schmidt |
| 98 | Betriebshandbuch erstellen 7 | 2019-10-04 13:00 → 2019-10-17 13:00 (+13d) | 2019-10-04 17:00 → 2019-10-18 12:00 (+14d) | 0.5d → 1d | 0d → 9d | 63 → 89 | constraint as late as possible → none; resources Gerrit Peitz; Leon König; Luca Siekmann; Robin Behrendt → Gerrit Peitz; Leon König; Robin Behrendt |
| 99 | Sprint Review & Retrospektive 7 | 2019-10-04 13:00 → 2019-10-18 13:00 (+14d) | 2019-10-04 17:00 → 2019-10-18 17:00 (+14d) |  | 0d → 8.5d |  | resources Gerrit Peitz; Leon König; Luca Siekmann; Lukas Schmidt; Robin Behrendt → Gerrit Peitz; Leon König; Lukas Schmidt; Robin Behrendt |
| 100 | **Finalisierungsphase** | 2019-11-18 08:00 → 2019-10-21 08:00 (-28d) | 2019-11-28 12:00 → 2019-10-30 12:00 (-29d) | 8.5d → 7.5d | 0d → 8.5d | Sprint 10 → 87 |  |
| 101 | Test durchführen 10 | 2019-11-18 08:00 → 2019-10-21 08:00 (-28d) | 2019-11-19 12:00 → 2019-10-21 17:00 (-29d) | 1.5d → 1d | 0d → 8.5d | Test vorbereiten 10 → 91 | resources Petra Prüfung; Theo Test; Leon Kuß → Theo Test; Leon Kuß |
| 102 | Fehler beheben 10 | 2019-11-20 08:00 → 2019-10-22 08:00 (-29d) | 2019-11-20 17:00 → 2019-10-22 17:00 (-29d) |  | 0d → 8.5d | 101FS+0.5d → 101 |  |
| 103 | Software installieren 10 | 2019-11-21 08:00 → 2019-10-23 08:00 (-29d) | 2019-11-21 12:00 → 2019-10-23 12:00 (-29d) |  | 0d → 8.5d |  |  |
| 104 | Nutzerakzeptanzumfrage durchführen 10 | 2019-11-25 13:00 → 2019-10-25 13:00 (-31d) | 2019-11-25 17:00 → 2019-10-25 17:00 (-31d) |  | 0d → 8.5d |  |  |
| 105 | Nutzerakzeptanzumfrage auswerten 10 | 2019-11-28 08:00 → 2019-10-30 08:00 (-29d) | 2019-11-28 12:00 → 2019-10-30 12:00 (-29d) |  | 0d → 8.5d |  |  |
| 106 | Performanceziele überprüfen 10 | 2019-11-21 13:00 → 2019-10-23 13:00 (-29d) | 2019-11-21 17:00 → 2019-10-23 17:00 (-29d) |  | 4.5d → 13d |  |  |
| 107 | Schulungskonzept erarbeiten | 2019-11-18 08:00 → 2019-10-21 08:00 (-28d) | 2019-11-27 17:00 → 2019-10-25 17:00 (-33d) | 8d → 5d | 0.5d → 11d | Sprint 10 → 87 |  |

## Version 5 (saved 2019-05-17)

Note of the change: Verschiebungen beseitigt

Last finish stays 2019-11-27.

Changed:

| ID | Task | Start | Finish | Duration | Total float |
| --- | --- | --- | --- | --- | --- |
| 12 | **Realisierungsphase** |  | 2019-10-30 12:00 → 2019-10-16 12:00 (-14d) | 86.5d → 76.5d |  |
| 13 | **Entwicklungssprints** |  | 2019-10-18 17:00 → 2019-10-04 17:00 (-14d) | 79d → 69d |  |
| 74 | **Sprint 6** |  | 2019-10-07 17:00 → 2019-09-20 17:00 (-17d) | 20d → 10d | 8.5d → 18.5d |
| 75 | Sprint Planning 6 |  | 2019-09-12 17:00 → 2019-09-09 12:00 (-3d) | 4d → 0.5d | 15.5d → 18.5d |
| 76 | Zusatzfunktionen implementieren 1 | 2019-09-13 08:00 → 2019-09-09 13:00 (-4d) | 2019-10-01 17:00 → 2019-09-19 12:00 (-12d) | 10d → 8d | 10.5d → 19d |
| 84 | Refinement 6 |  | 2019-09-18 17:00 → 2019-09-16 12:00 (-2d) | 3d → 0.5d | 20.5d → 23d |
| 85 | Betriebshandbuch erstellen 6 | 2019-10-02 08:00 → 2019-09-19 13:00 (-13d) | 2019-10-07 17:00 → 2019-09-20 12:00 (-17d) | 2d → 1d | 8.5d → 19d |
| 87 | **Sprint 7** | 2019-10-08 08:00 → 2019-09-23 08:00 (-15d) | 2019-10-18 17:00 → 2019-10-04 17:00 (-14d) |  | 8.5d → 18.5d |
| 88 | Sprint Planning 7 | 2019-10-08 08:00 → 2019-09-23 08:00 (-15d) | 2019-10-08 12:00 → 2019-09-23 12:00 (-15d) |  | 8.5d → 18.5d |
| 89 | Zusatzfunktionen implementieren 2 | 2019-10-08 13:00 → 2019-09-23 13:00 (-15d) | 2019-10-17 12:00 → 2019-10-02 12:00 (-15d) |  | 9d → 19d |
| 90 | Test durchführen 6 | 2019-10-08 08:00 → 2019-09-23 08:00 (-15d) | 2019-10-09 12:00 → 2019-09-24 12:00 (-15d) |  | 10d → 20d |
| 91 | Test vorbereiten 7 | 2019-10-09 13:00 → 2019-09-24 13:00 (-15d) | 2019-10-11 17:00 → 2019-09-26 17:00 (-15d) |  | 13.5d → 23.5d |
| 92 | Fehler beheben 6 | 2019-10-10 08:00 → 2019-09-25 08:00 (-15d) | 2019-10-10 17:00 → 2019-09-25 17:00 (-15d) |  | 10d → 20d |
| 93 | Software installieren 6 | 2019-10-11 08:00 → 2019-09-26 08:00 (-15d) | 2019-10-11 12:00 → 2019-09-26 12:00 (-15d) |  | 10d → 20d |
| 94 | Nutzerakzeptanzumfrage durchführen 6 | 2019-10-15 13:00 → 2019-09-30 13:00 (-15d) | 2019-10-15 17:00 → 2019-09-30 17:00 (-15d) |  | 10d → 20d |
| 95 | Nutzerakzeptanzumfrage auswerten 6 | 2019-10-17 08:00 → 2019-10-02 08:00 (-15d) | 2019-10-17 12:00 → 2019-10-02 12:00 (-15d) |  | 10d → 20d |
| 96 | Performanceziele überprüfen 6 | 2019-10-11 13:00 → 2019-09-26 13:00 (-15d) | 2019-10-11 17:00 → 2019-09-26 17:00 (-15d) |  | 13.5d → 23.5d |
| 97 | Refinement 7 | 2019-10-15 08:00 → 2019-09-30 08:00 (-15d) | 2019-10-15 12:00 → 2019-09-30 12:00 (-15d) |  | 12d → 22d |
| 98 | Betriebshandbuch erstellen 7 | 2019-10-17 13:00 → 2019-10-02 13:00 (-15d) | 2019-10-18 12:00 → 2019-10-04 12:00 (-14d) |  | 9d → 19d |
| 99 | Sprint Review & Retrospektive 7 | 2019-10-18 13:00 → 2019-10-04 13:00 (-14d) | 2019-10-18 17:00 → 2019-10-04 17:00 (-14d) |  | 8.5d → 18.5d |
| 100 | **Finalisierungsphase** | 2019-10-21 08:00 → 2019-10-07 08:00 (-14d) | 2019-10-30 12:00 → 2019-10-16 12:00 (-14d) |  | 8.5d → 18.5d |
| 101 | Test durchführen 10 | 2019-10-21 08:00 → 2019-10-07 08:00 (-14d) | 2019-10-21 17:00 → 2019-10-07 17:00 (-14d) |  | 8.5d → 18.5d |
| 102 | Fehler beheben 10 | 2019-10-22 08:00 → 2019-10-08 08:00 (-14d) | 2019-10-22 17:00 → 2019-10-08 17:00 (-14d) |  | 8.5d → 18.5d |
| 103 | Software installieren 10 | 2019-10-23 08:00 → 2019-10-09 08:00 (-14d) | 2019-10-23 12:00 → 2019-10-09 12:00 (-14d) |  | 8.5d → 18.5d |
| 104 | Nutzerakzeptanzumfrage durchführen 10 | 2019-10-25 13:00 → 2019-10-11 13:00 (-14d) | 2019-10-25 17:00 → 2019-10-11 17:00 (-14d) |  | 8.5d → 18.5d |
| 105 | Nutzerakzeptanzumfrage auswerten 10 | 2019-10-30 08:00 → 2019-10-16 08:00 (-14d) | 2019-10-30 12:00 → 2019-10-16 12:00 (-14d) |  | 8.5d → 18.5d |
| 106 | Performanceziele überprüfen 10 | 2019-10-23 13:00 → 2019-10-09 13:00 (-14d) | 2019-10-23 17:00 → 2019-10-09 17:00 (-14d) |  | 13d → 23d |
| 107 | Schulungskonzept erarbeiten | 2019-10-21 08:00 → 2019-10-07 08:00 (-14d) | 2019-10-25 17:00 → 2019-10-11 17:00 (-14d) |  | 11d → 21d |
| 108 | Schulung durchführen | 2019-11-01 13:00 → 2019-10-17 13:00 (-15d) | 2019-11-15 12:00 → 2019-11-01 12:00 (-14d) |  | 8.5d → 18.5d |

## Version 6 (saved 2019-05-17)

Note of the change: Meilensteinplan

Last finish stays 2019-11-27.

Added:

| ID | Task | Duration | Start | Finish | Predecessors |
| --- | --- | --- | --- | --- | --- |
| 7 | Freigabe der Anforderungen | 0d | 2019-06-14 17:00 | 2019-06-14 17:00 | 6 |
| 13 | Konzepte und Arbeitspakete erstellt und abgestimmt | 0d | 2019-06-27 17:00 | 2019-06-27 17:00 | 9, 10, 11, 12 |
| 23 | Kernsystem fertig implementiert | 0d | 2019-07-11 12:00 | 2019-07-11 12:00 | 18 |
| 64 | Prozesse fertig implementiert | 0d | 2019-08-16 17:00 | 2019-08-16 17:00 | 52 |
| 78 | "Schmankerl" fertig implementiert | 0d | 2019-08-23 17:00 | 2019-08-23 17:00 |  |
| 105 | Zusatzfunktionen fertig implementiert | 0d | 2019-10-02 12:00 | 2019-10-02 12:00 | 94 |
| 106 | Entwicklung abgeschlossen | 0d | 2019-10-04 17:00 | 2019-10-04 17:00 | 15 |
| 114 | Software eingeführt und abgenommen | 0d | 2019-10-09 17:00 | 2019-10-09 17:00 | 113 |
| 117 | Projektabschluss | 0d | 2019-11-01 12:00 | 2019-11-01 12:00 | 116 |

Changed:

| ID | Task | Start | Predecessors | Other |
| --- | --- | --- | --- | --- |
| 8 | **Konzeptionsphase** |  | 4 → 7 |  |
| 9 | Grobkonzept vervollständigen |  | 5, 6 → 7 |  |
| 65 | **Sprint 5** | 2019-08-26 08:00 → 2019-08-23 17:00 (-3d) |  |  |
| 108 | Test durchführen 7 |  |  | was named Test durchführen 10 |
| 109 | Fehler beheben 7 |  |  | was named Fehler beheben 10 |
| 110 | Software installieren 7 |  |  | was named Software installieren 10 |
| 111 | Nutzerakzeptanzumfrage durchführen 7 |  |  | was named Nutzerakzeptanzumfrage durchführen 10 |
| 112 | Nutzerakzeptanzumfrage auswerten 7 |  |  | was named Nutzerakzeptanzumfrage auswerten 10 |
| 113 | Performanceziele überprüfen 7 |  |  | was named Performanceziele überprüfen 10 |

## Version 7 (saved 2019-05-17)

Note of the change: präsentation und grafiken

Last finish stays 2019-11-27.

Changed:

| ID | Task | Start | Finish | Total float | Predecessors |
| --- | --- | --- | --- | --- | --- |
| 65 | **Sprint 5** | 2019-08-23 17:00 → 2019-08-26 08:00 (+3d) |  |  |  |
| 78 | "Schmankerl" fertig implementiert | 2019-08-23 17:00 → 2019-09-05 12:00 (+13d) | 2019-08-23 17:00 → 2019-09-05 12:00 (+13d) | 28.5d → 20d | none → 67 |
